# CD - F0009 - 0207 - STOCKHOUSE - 20260722

Schedule from MS Project, 2026-07-13 to 2026-08-20, status date 2026-07-21, A marks actual dates.

## Calendars

- Padrão: Mon-Fri 09:00-12:00, 13:00-18:00; Sat-Sun off.

## Resources

| Resource |
| --- |
| Rodrigo |
| TECNORED |
| André |
| Ailton |
| Felipe, André |
| Carlos |
| Everton, Ricardo |
| Lazaro |
| João |
| Tarcizio |
| Felipe |
| André, Felipe |
| Calebe |
| Levy |
| Paulo |
| Marcio |
| Ricardo, Everton |

## Schedule

| ID | WBS | Task | Type | Duration | Start | Finish | Predecessors | Complete | Remaining | Total slack | Free slack | Resources | Work | Actual work | COD_Projeto | Disciplina |
| --- | --- | --- | --- | --- | --- | --- | --- | --- | --- | --- | --- | --- | --- | --- | --- | --- |
| 1 | 1 | **F0009 - 0207 - STOCKHOUSE** |  | 29d | 2026-07-13 A | 2026-08-20 |  | 2% | 28.47d | 0d |  |  | 9543.6h | 145.51h |  |  |
| 2 | 1.1 | **PLANNING** |  | 11d | 2026-07-13 A | 2026-07-27 |  | 12% | 9.63d | 18d |  |  | 239.6h | 29.6h |  |  |
| 3 | 1.1.1 | **LD-F0009-0207-MB-G-00001** |  | 5.85d | 2026-07-13 A | 2026-07-20 |  | 32% | 4d | 23.15d |  | Rodrigo | 95.6h | 29.6h | 0207 | PLANNING |
| 4 | 1.1.1.1 | Emissão Inicial |  | 1.85d | 2026-07-13 A | 2026-07-14 A |  | 100% |  |  |  | Rodrigo | 14.8h | 14.8h | 0207 | PLANNING |
| 5 | 1.1.1.2 | Análise Tecnored |  | 1d | 2026-07-14 | 2026-07-15 | 4 |  |  | 23.15d | 0d | TECNORED | 8h |  | 0207 | PLANNING |
| 6 | 1.1.1.3 | Atendimento de comentários |  | 2d | 2026-07-15 | 2026-07-17 | 5 |  |  | 23.15d | 0d | André | 16h |  | 0207 | PLANNING |
| 7 | 1.1.1.4 | Aprovação |  | 1d | 2026-07-17 | 2026-07-20 | 6 |  |  | 23.15d |  | TECNORED | 8h |  | 0207 | PLANNING |
| 8 | 1.1.2 | **CR-F0009-0207-MB-G-00001** |  | 9d | 2026-07-15 | 2026-07-27 |  |  |  | 18d |  | André | 144h |  | 0207 | PLANNING |
| 9 | 1.1.2.1 | Emissão Inicial |  | 5d | 2026-07-15 | 2026-07-21 |  |  |  | 18d | 0d | Rodrigo | 40h |  | 0207 | PLANNING |
| 10 | 1.1.2.2 | Análise Tecnored |  | 1d | 2026-07-22 | 2026-07-22 | 9 |  |  | 18d | 0d | TECNORED | 8h |  | 0207 | PLANNING |
| 11 | 1.1.2.3 | Atendimento de comentários |  | 2d | 2026-07-23 | 2026-07-24 | 10 |  |  | 18d | 0d | André | 16h |  | 0207 | PLANNING |
| 12 | 1.1.2.4 | Aprovação |  | 1d | 2026-07-27 | 2026-07-27 | 11 |  |  | 18d |  | TECNORED | 8h |  | 0207 | PLANNING |
| 13 | 1.2 | **COORDINATION** |  | 22d | 2026-07-15 A | 2026-08-13 |  | 10% | 19.8d | 5d |  |  | 960h | 80h |  |  |
| 14 | 1.2.1 | **CM-F0009-0000-MB-G-00001** |  | 7d | 2026-07-15 | 2026-07-23 |  |  |  | 20d |  | André | 112h |  | 0207 | COORDINATION |
| 15 | 1.2.1.1 | Emissão Inicial |  | 3d | 2026-07-15 | 2026-07-17 |  |  |  | 20d | 0d | Rodrigo | 24h |  | 0207 | COORDINATION |
| 16 | 1.2.1.2 | Análise Tecnored |  | 1d | 2026-07-20 | 2026-07-20 | 15 |  |  | 20d | 0d | TECNORED | 8h |  | 0207 | COORDINATION |
| 17 | 1.2.1.3 | Atendimento de comentários |  | 2d | 2026-07-21 | 2026-07-22 | 16 |  |  | 20d | 0d | André | 16h |  | 0207 | COORDINATION |
| 18 | 1.2.1.4 | Aprovação |  | 1d | 2026-07-23 | 2026-07-23 | 17 |  |  | 20d |  | TECNORED | 8h |  | 0207 | COORDINATION |
| 19 | 1.2.2 | **PP-F0009-0000-MB-G-00001** | inactive | 9d | 2026-07-15 | 2026-07-27 |  |  |  | 1d |  | Ailton | 144h |  | 0207 | COORDINATION |
| 20 | 1.2.2.1 | Emissão Inicial | inactive | 5d | 2026-07-15 | 2026-07-21 |  |  |  | 1d | 0d | Rodrigo | 40h |  | 0207 | COORDINATION |
| 21 | 1.2.2.2 | Análise Tecnored | inactive | 1d | 2026-07-22 | 2026-07-22 | 20 |  |  | 18d | 0d | TECNORED | 8h |  | 0207 | COORDINATION |
| 22 | 1.2.2.3 | Atendimento de comentários | inactive | 2d | 2026-07-23 | 2026-07-24 | 21 |  |  | 18d | 0d | André | 16h |  | 0207 | COORDINATION |
| 23 | 1.2.2.4 | Aprovação | inactive | 1d | 2026-07-27 | 2026-07-27 | 22 |  |  | 18d |  | TECNORED | 8h |  | 0207 | COORDINATION |
| 24 | 1.2.3 | TAP | milestone | 1.1d | 2026-07-16 A | 2026-07-17 A |  | 100% |  |  |  |  |  |  |  | COORDINATION |

| ID | WBS | Task | Duration | Start | Finish | Predecessors | Complete | Remaining | Total slack | Free slack | Resources | Work | Actual work | COD_Projeto | Disciplina |
| --- | --- | --- | --- | --- | --- | --- | --- | --- | --- | --- | --- | --- | --- | --- | --- |
| 25 | 1.2.4 | **OP-F0009-0000-MB-G-00001** | 7d | 2026-07-17 | 2026-07-28 |  |  |  | 17.9d |  | Felipe, André | 112h |  | 0207 | COORDINATION |
| 26 | 1.2.4.1 | Emissão Inicial | 3d | 2026-07-17 | 2026-07-22 | 24 |  |  | 17.9d | 0d | Rodrigo | 24h |  | 0207 | COORDINATION |
| 27 | 1.2.4.2 | Análise Tecnored | 1d | 2026-07-22 | 2026-07-23 | 26 |  |  | 17.9d | 0d | TECNORED | 8h |  | 0207 | COORDINATION |
| 28 | 1.2.4.3 | Atendimento de comentários | 2d | 2026-07-23 | 2026-07-27 | 27 |  |  | 17.9d | 0d | André | 16h |  | 0207 | COORDINATION |
| 29 | 1.2.4.4 | Aprovação | 1d | 2026-07-27 | 2026-07-28 | 28 |  |  | 17.9d |  | TECNORED | 8h |  | 0207 | COORDINATION |
| 30 | 1.2.5 | **MM-F0009-0000-MB-G-00001** | 9d | 2026-07-15 | 2026-07-27 |  |  |  | 18d |  | Felipe, André | 144h |  | 0207 | COORDINATION |
| 31 | 1.2.5.1 | Emissão Inicial | 5d | 2026-07-15 | 2026-07-21 |  |  |  | 18d | 0d | Rodrigo | 40h |  | 0207 | COORDINATION |
| 32 | 1.2.5.2 | Análise Tecnored | 1d | 2026-07-22 | 2026-07-22 | 31 |  |  | 18d | 0d | TECNORED | 8h |  | 0207 | COORDINATION |
| 33 | 1.2.5.3 | Atendimento de comentários | 2d | 2026-07-23 | 2026-07-24 | 32 |  |  | 18d | 0d | André | 16h |  | 0207 | COORDINATION |
| 34 | 1.2.5.4 | Aprovação | 1d | 2026-07-27 | 2026-07-27 | 33 |  |  | 18d |  | TECNORED | 8h |  | 0207 | COORDINATION |
| 35 | 1.2.6 | **MF-F0009-0000-MB-G-00001** | 7d | 2026-08-05 | 2026-08-13 |  |  |  | 5d |  | Carlos | 112h |  | 0207 | COORDINATION |
| 36 | 1.2.6.1 | Emissão Inicial | 3d | 2026-08-05 | 2026-08-07 | 183, 365, 421, 482 |  |  | 5d | 0d | Rodrigo | 24h |  | 0207 | COORDINATION |
| 37 | 1.2.6.2 | Análise Tecnored | 1d | 2026-08-10 | 2026-08-10 | 36 |  |  | 5d | 0d | TECNORED | 8h |  | 0207 | COORDINATION |
| 38 | 1.2.6.3 | Atendimento de comentários | 2d | 2026-08-11 | 2026-08-12 | 37 |  |  | 5d | 0d | André | 16h |  | 0207 | COORDINATION |
| 39 | 1.2.6.4 | Aprovação | 1d | 2026-08-13 | 2026-08-13 | 38 |  |  | 5d |  | TECNORED | 8h |  | 0207 | COORDINATION |
| 40 | 1.2.7 | **EA-F0009-0000-MB-G-00001** | 9d | 2026-07-15 A | 2026-07-27 |  | 56% | 4d | 18d |  | Rodrigo | 144h | 80h | 0207 | COORDINATION |
| 41 | 1.2.7.1 | Emissão Inicial | 5d | 2026-07-15 A | 2026-07-21 A |  | 100% |  |  |  | Rodrigo | 40h | 40h | 0207 | COORDINATION |
| 42 | 1.2.7.2 | Análise Tecnored | 1d | 2026-07-22 | 2026-07-22 | 41 |  |  | 18d | 0d | TECNORED | 8h |  | 0207 | COORDINATION |
| 43 | 1.2.7.3 | Atendimento de comentários | 2d | 2026-07-23 | 2026-07-24 | 42 |  |  | 18d | 0d | André | 16h |  | 0207 | COORDINATION |
| 44 | 1.2.7.4 | Aprovação | 1d | 2026-07-27 | 2026-07-27 | 43 |  |  | 18d |  | TECNORED | 8h |  | 0207 | COORDINATION |
| 45 | 1.2.8 | **RM-F0009-0000-GE-G-00001** | 7d | 2026-07-15 | 2026-07-23 |  |  |  | 20d |  | Everton, Ricardo | 112h |  | 0207 | COORDINATION |
| 46 | 1.2.8.1 | Emissão Inicial | 3d | 2026-07-15 | 2026-07-17 | 20FS+20ed |  |  | 20d | 0d | Rodrigo | 24h |  | 0207 | COORDINATION |
| 47 | 1.2.8.2 | Análise Tecnored | 1d | 2026-07-20 | 2026-07-20 | 46 |  |  | 20d | 0d | TECNORED | 8h |  | 0207 | COORDINATION |
| 48 | 1.2.8.3 | Atendimento de comentários | 2d | 2026-07-21 | 2026-07-22 | 47 |  |  | 20d | 0d | André | 16h |  | 0207 | COORDINATION |
| 49 | 1.2.8.4 | Aprovação | 1d | 2026-07-23 | 2026-07-23 | 48 |  |  | 20d |  | TECNORED | 8h |  | 0207 | COORDINATION |

| ID | WBS | Task | Type | Duration | Start | Finish | Predecessors | Complete | Remaining | Total slack | Free slack | Resources | Work | Actual work | COD_Projeto | Disciplina |
| --- | --- | --- | --- | --- | --- | --- | --- | --- | --- | --- | --- | --- | --- | --- | --- | --- |
| 50 | 1.2.9 | **RM-F0009-0000-GE-G-00002** |  | 7d | 2026-07-15 | 2026-07-23 |  |  |  | 20d |  | Everton, Ricardo | 112h |  | 0207 | COORDINATION |
| 51 | 1.2.9.1 | Emissão Inicial |  | 3d | 2026-07-15 | 2026-07-17 |  |  |  | 20d | 0d | Rodrigo | 24h |  | 0207 | COORDINATION |
| 52 | 1.2.9.2 | Análise Tecnored |  | 1d | 2026-07-20 | 2026-07-20 | 51 |  |  | 20d | 0d | TECNORED | 8h |  | 0207 | COORDINATION |
| 53 | 1.2.9.3 | Atendimento de comentários |  | 2d | 2026-07-21 | 2026-07-22 | 52 |  |  | 20d | 0d | André | 16h |  | 0207 | COORDINATION |
| 54 | 1.2.9.4 | Aprovação |  | 1d | 2026-07-23 | 2026-07-23 | 53 |  |  | 20d |  | TECNORED | 8h |  | 0207 | COORDINATION |
| 55 | 1.2.10 | **RL-F0009-0000-GE-G-00001** | inactive | 7d | 2026-07-15 | 2026-07-23 |  |  |  | 20d |  | Everton, Ricardo | 112h |  | 0207 | COORDINATION |
| 56 | 1.2.10.1 | Emissão Inicial | inactive | 3d | 2026-07-15 | 2026-07-17 |  |  |  | 20d | 0d | Rodrigo | 24h |  | 0207 | COORDINATION |
| 57 | 1.2.10.2 | Análise Tecnored | inactive | 1d | 2026-07-20 | 2026-07-20 | 56 |  |  | 20d | 0d | TECNORED | 8h |  | 0207 | COORDINATION |
| 58 | 1.2.10.3 | Atendimento de comentários | inactive | 2d | 2026-07-21 | 2026-07-22 | 57 |  |  | 20d | 0d | André | 16h |  | 0207 | COORDINATION |
| 59 | 1.2.10.4 | Aprovação | inactive | 1d | 2026-07-23 | 2026-07-23 | 58 |  |  | 20d |  | TECNORED | 8h |  | 0207 | COORDINATION |
| 60 | 1.2.11 | **LP-F0009-0207-MB-G-00001** |  | 7d | 2026-07-15 | 2026-07-23 |  |  |  | 20d |  | Lazaro | 112h |  | 0207 | COORDINATION |
| 61 | 1.2.11.1 | Emissão Inicial |  | 3d | 2026-07-15 | 2026-07-17 |  |  |  | 20d | 0d | Rodrigo | 24h |  | 0207 | COORDINATION |
| 62 | 1.2.11.2 | Análise Tecnored |  | 1d | 2026-07-20 | 2026-07-20 | 61 |  |  | 20d | 0d | TECNORED | 8h |  | 0207 | COORDINATION |
| 63 | 1.2.11.3 | Atendimento de comentários |  | 2d | 2026-07-21 | 2026-07-22 | 62 |  |  | 20d | 0d | André | 16h |  | 0207 | COORDINATION |
| 64 | 1.2.11.4 | Aprovação |  | 1d | 2026-07-23 | 2026-07-23 | 63 |  |  | 20d |  | TECNORED | 8h |  | 0207 | COORDINATION |
| 65 | 1.3 | **PROCESS** |  | 12d | 2026-07-15 A | 2026-07-30 |  | 18% | 9.86d | 15d |  |  | 256h | 35.91h |  |  |
| 66 | 1.3.1 | **CA-F0009-0207-MB-G-00001** | inactive | 7d | 2026-07-21 | 2026-07-29 |  |  |  | 16d |  | André | 112h |  | 0207 | PROCESS |
| 67 | 1.3.1.1 | Emissão Inicial | inactive | 3d | 2026-07-21 | 2026-07-23 | 77, 92 |  |  | 16d | 0d | Rodrigo | 24h |  | 0207 | PROCESS |
| 68 | 1.3.1.2 | Análise Tecnored | inactive | 1d | 2026-07-24 | 2026-07-24 | 67 |  |  | 16d | 0d | TECNORED | 8h |  | 0207 | PROCESS |
| 69 | 1.3.1.3 | Atendimento de comentários | inactive | 2d | 2026-07-27 | 2026-07-28 | 68 |  |  | 16d | 0d | André | 16h |  | 0207 | PROCESS |
| 70 | 1.3.1.4 | Aprovação | inactive | 1d | 2026-07-29 | 2026-07-29 | 69 |  |  | 16d |  | TECNORED | 8h |  | 0207 | PROCESS |
| 71 | 1.3.2 | **DB-F0009-0207-MB-P-00001** | inactive | 7d | 2026-07-15 | 2026-07-23 |  |  |  | 20d |  | André | 112h |  | 0207 | PROCESS |
| 72 | 1.3.2.1 | Emissão Inicial | inactive | 3d | 2026-07-15 | 2026-07-17 |  |  |  | 20d | 0d | Rodrigo | 24h |  | 0207 | PROCESS |
| 73 | 1.3.2.2 | Análise Tecnored | inactive | 1d | 2026-07-20 | 2026-07-20 | 72 |  |  | 20d | 0d | TECNORED | 8h |  | 0207 | PROCESS |
| 74 | 1.3.2.3 | Atendimento de comentários | inactive | 2d | 2026-07-21 | 2026-07-22 | 73 |  |  | 20d | 0d | André | 16h |  | 0207 | PROCESS |
| 75 | 1.3.2.4 | Aprovação | inactive | 1d | 2026-07-23 | 2026-07-23 | 74 |  |  | 20d |  | TECNORED | 8h |  | 0207 | PROCESS |

| ID | WBS | Task | Type | Duration | Start | Finish | Predecessors | Complete | Remaining | Total slack | Free slack | Constraint | Resources | Work | Actual work | COD_Projeto | Disciplina |
| --- | --- | --- | --- | --- | --- | --- | --- | --- | --- | --- | --- | --- | --- | --- | --- | --- | --- |
| 76 | 1.3.3 | **FG-F0009-0207-MB-P-00001** |  | 8d | 2026-07-15 A | 2026-07-24 |  | 36% | 5.15d | 19d |  |  | João | 128h | 35.91h | 0207 | PROCESS |
| 77 | 1.3.3.1 | Emissão Inicial |  | 4d | 2026-07-15 A | 2026-07-20 |  | 71% | 1.15d | 5d | 0d | finish no earlier than 2026-07-20 | Rodrigo | 32h | 22.8h | 0207 | PROCESS |
| 78 | 1.3.3.2 | Análise Tecnored |  | 1d | 2026-07-21 | 2026-07-21 | 77 |  |  | 19d | 0d |  | TECNORED | 8h |  | 0207 | PROCESS |
| 79 | 1.3.3.3 | Atendimento de comentários |  | 2d | 2026-07-22 | 2026-07-23 | 78 |  |  | 19d | 0d |  | André | 16h |  | 0207 | PROCESS |
| 80 | 1.3.3.4 | Aprovação |  | 1d | 2026-07-24 | 2026-07-24 | 79 |  |  | 19d |  |  | TECNORED | 8h |  | 0207 | PROCESS |
| 81 | 1.3.4 | **MD-F0009-0207-MB-P-00001** | inactive | 7d | 2026-07-27 | 2026-08-04 |  |  |  | 12d |  |  | Carlos | 112h |  | 0207 | PROCESS |
| 82 | 1.3.4.1 | Emissão Inicial | inactive | 3d | 2026-07-27 | 2026-07-29 | 87 |  |  | 12d | 0d |  | Rodrigo | 24h |  | 0207 | PROCESS |
| 83 | 1.3.4.2 | Análise Tecnored | inactive | 1d | 2026-07-30 | 2026-07-30 | 82 |  |  | 12d | 0d |  | TECNORED | 8h |  | 0207 | PROCESS |
| 84 | 1.3.4.3 | Atendimento de comentários | inactive | 2d | 2026-07-31 | 2026-08-03 | 83 |  |  | 12d | 0d |  | André | 16h |  | 0207 | PROCESS |
| 85 | 1.3.4.4 | Aprovação | inactive | 1d | 2026-08-04 | 2026-08-04 | 84 |  |  | 12d |  |  | TECNORED | 8h |  | 0207 | PROCESS |
| 86 | 1.3.5 | **MC-F0009-0207-MB-P-00001** |  | 8d | 2026-07-21 | 2026-07-30 |  |  |  | 15d |  |  | João | 128h |  | 0207 | PROCESS |
| 87 | 1.3.5.1 | Emissão Inicial |  | 4d | 2026-07-21 | 2026-07-24 | 77 |  |  | 15d | 0d | finish no earlier than 2026-07-22 | Rodrigo | 32h |  | 0207 | PROCESS |
| 88 | 1.3.5.2 | Análise Tecnored |  | 1d | 2026-07-27 | 2026-07-27 | 87 |  |  | 15d | 0d |  | TECNORED | 8h |  | 0207 | PROCESS |
| 89 | 1.3.5.3 | Atendimento de comentários |  | 2d | 2026-07-28 | 2026-07-29 | 88 |  |  | 15d | 0d |  | André | 16h |  | 0207 | PROCESS |
| 90 | 1.3.5.4 | Aprovação |  | 1d | 2026-07-30 | 2026-07-30 | 89 |  |  | 15d |  |  | TECNORED | 8h |  | 0207 | PROCESS |
| 91 | 1.3.6 | **ET-F0009-0207-MB-P-00001** | inactive | 7d | 2026-07-15 | 2026-07-23 |  |  |  | 17d |  |  | Rodrigo | 112h |  | 0207 | PROCESS |
| 92 | 1.3.6.1 | Emissão Inicial | inactive | 3d | 2026-07-15 | 2026-07-17 |  |  |  | 17d | 0d |  | Rodrigo | 24h |  | 0207 | PROCESS |
| 93 | 1.3.6.2 | Análise Tecnored | inactive | 1d | 2026-07-20 | 2026-07-20 | 92 |  |  | 20d | 0d |  | TECNORED | 8h |  | 0207 | PROCESS |
| 94 | 1.3.6.3 | Atendimento de comentários | inactive | 2d | 2026-07-21 | 2026-07-22 | 93 |  |  | 20d | 0d |  | André | 16h |  | 0207 | PROCESS |
| 95 | 1.3.6.4 | Aprovação | inactive | 1d | 2026-07-23 | 2026-07-23 | 94 |  |  | 20d |  |  | TECNORED | 8h |  | 0207 | PROCESS |
| 96 | 1.4 | **MECHANICAL** |  | 17d | 2026-07-21 | 2026-08-12 |  |  |  | 5d |  |  |  | 1968h |  |  |  |
| 97 | 1.4.1 | **LE-F0009-0207-MB-M-00001** |  | 12d | 2026-07-21 | 2026-08-05 |  |  |  | 9d |  |  | Tarcizio | 192h |  | 0207 | MECHANICAL |
| 98 | 1.4.1.1 | Emissão Inicial |  | 9d | 2026-07-21 | 2026-07-31 | 77 |  |  | 9d | 0d | finish no earlier than 2026-07-31 | Rodrigo | 72h |  | 0207 | MECHANICAL |
| 99 | 1.4.1.2 | Análise Tecnored |  | 1d | 2026-08-03 | 2026-08-03 | 98 |  |  | 11d | 0d |  | TECNORED | 8h |  | 0207 | MECHANICAL |
| 100 | 1.4.1.3 | Atendimento de comentários |  | 1d | 2026-08-04 | 2026-08-04 | 99 |  |  | 11d | 0d |  | André | 8h |  | 0207 | MECHANICAL |
| 101 | 1.4.1.4 | Aprovação |  | 1d | 2026-08-05 | 2026-08-05 | 100 |  |  | 11d |  |  | TECNORED | 8h |  | 0207 | MECHANICAL |

| ID | WBS | Task | Type | Duration | Start | Finish | Predecessors | Total slack | Free slack | Constraint | Resources | Work | COD_Projeto | Disciplina |
| --- | --- | --- | --- | --- | --- | --- | --- | --- | --- | --- | --- | --- | --- | --- |
| 102 | 1.4.2 | **MD-F0009-0207-MB-M-00001** | inactive | 6d | 2026-07-15 | 2026-07-22 |  | 21d |  |  | Carlos | 96h | 0207 | MECHANICAL |
| 103 | 1.4.2.1 | Emissão Inicial | inactive | 3d | 2026-07-15 | 2026-07-17 |  | 21d | 0d |  | Rodrigo | 24h | 0207 | MECHANICAL |
| 104 | 1.4.2.2 | Análise Tecnored | inactive | 1d | 2026-07-20 | 2026-07-20 | 103 | 21d | 0d |  | TECNORED | 8h | 0207 | MECHANICAL |
| 105 | 1.4.2.3 | Atendimento de comentários | inactive | 1d | 2026-07-21 | 2026-07-21 | 104 | 21d | 0d |  | André | 8h | 0207 | MECHANICAL |
| 106 | 1.4.2.4 | Aprovação | inactive | 1d | 2026-07-22 | 2026-07-22 | 105 | 21d |  |  | TECNORED | 8h | 0207 | MECHANICAL |
| 107 | 1.4.3 | **MC-F0009-0207-MB-M-00001** |  | 12d | 2026-07-21 | 2026-08-05 |  | 9d |  |  | Tarcizio | 192h | 0207 | MECHANICAL |
| 108 | 1.4.3.1 | Emissão Inicial |  | 9d | 2026-07-21 | 2026-07-31 | 77 | 9d | 0d | finish no earlier than 2026-07-31 | Rodrigo | 72h | 0207 | MECHANICAL |
| 109 | 1.4.3.2 | Análise Tecnored |  | 1d | 2026-08-03 | 2026-08-03 | 108 | 11d | 0d |  | TECNORED | 8h | 0207 | MECHANICAL |
| 110 | 1.4.3.3 | Atendimento de comentários |  | 1d | 2026-08-04 | 2026-08-04 | 109 | 11d | 0d |  | André | 8h | 0207 | MECHANICAL |
| 111 | 1.4.3.4 | Aprovação |  | 1d | 2026-08-05 | 2026-08-05 | 110 | 11d |  |  | TECNORED | 8h | 0207 | MECHANICAL |
| 112 | 1.4.4 | **PQ-F0009-0207-MB-M-00001** |  | 4d | 2026-08-07 | 2026-08-12 |  | 6d |  |  | Tarcizio | 64h | 0207 | MECHANICAL |
| 113 | 1.4.4.1 | Emissão Inicial |  | 1d | 2026-08-07 | 2026-08-07 |  | 6d | 0d | finish no earlier than 2026-08-07 | Rodrigo | 8h | 0207 | MECHANICAL |
| 114 | 1.4.4.2 | Análise Tecnored |  | 1d | 2026-08-10 | 2026-08-10 | 113 | 6d | 0d |  | TECNORED | 8h | 0207 | MECHANICAL |
| 115 | 1.4.4.3 | Atendimento de comentários |  | 1d | 2026-08-11 | 2026-08-11 | 114 | 6d | 0d |  | André | 8h | 0207 | MECHANICAL |
| 116 | 1.4.4.4 | Aprovação |  | 1d | 2026-08-12 | 2026-08-12 | 115 | 6d |  |  | TECNORED | 8h | 0207 | MECHANICAL |
| 117 | 1.4.5 | **AG-F0009-0207-MB-M-00000** | inactive | 5d | 2026-08-14 | 2026-08-20 |  | -11d | 0d |  | Ailton | 80h | 0207 | MECHANICAL |
| 118 | 1.4.5.1 | Emissão Inicial | inactive | 2d | 2026-08-14 | 2026-08-17 | 183 | -11d | 0d |  | Rodrigo | 16h | 0207 | MECHANICAL |
| 119 | 1.4.5.2 | Análise Tecnored | inactive | 1d | 2026-08-18 | 2026-08-18 | 118 | 0d |  |  | TECNORED | 8h | 0207 | MECHANICAL |
| 120 | 1.4.5.3 | Atendimento de comentários | inactive | 1d | 2026-08-19 | 2026-08-19 | 119 | 0d |  |  | André | 8h | 0207 | MECHANICAL |
| 121 | 1.4.5.4 | Aprovação | inactive | 1d | 2026-08-20 | 2026-08-20 | 120 | 0d |  |  | TECNORED | 8h | 0207 | MECHANICAL |
| 122 | 1.4.6 | **AG-F0009-0207-MB-M-00001** |  | 5d | 2026-07-29 | 2026-08-04 |  | 3d |  |  | Felipe | 80h | 0207 | MECHANICAL |
| 123 | 1.4.6.1 | Emissão Inicial |  | 2d | 2026-07-29 | 2026-07-30 | 118SS | 3d | 0d | start no earlier than 2026-07-29 | Rodrigo | 16h | 0207 | MECHANICAL |
| 124 | 1.4.6.2 | Análise Tecnored |  | 1d | 2026-07-31 | 2026-07-31 | 123 | 12d | 0d |  | TECNORED | 8h | 0207 | MECHANICAL |
| 125 | 1.4.6.3 | Atendimento de comentários |  | 1d | 2026-08-03 | 2026-08-03 | 124 | 12d | 0d |  | André | 8h | 0207 | MECHANICAL |
| 126 | 1.4.6.4 | Aprovação |  | 1d | 2026-08-04 | 2026-08-04 | 125 | 12d |  |  | TECNORED | 8h | 0207 | MECHANICAL |

| ID | WBS | Task | Type | Duration | Start | Finish | Predecessors | Total slack | Free slack | Constraint | Resources | Work | COD_Projeto | Disciplina |
| --- | --- | --- | --- | --- | --- | --- | --- | --- | --- | --- | --- | --- | --- | --- |
| 127 | 1.4.7 | **AG-F0009-0207-MB-M-00002** |  | 5d | 2026-07-29 | 2026-08-04 |  | 3d |  |  | Felipe | 80h | 0207 | MECHANICAL |
| 128 | 1.4.7.1 | Emissão Inicial |  | 2d | 2026-07-29 | 2026-07-30 | 118 | 3d | 0d | start no earlier than 2026-07-29 | Rodrigo | 16h | 0207 | MECHANICAL |
| 129 | 1.4.7.2 | Análise Tecnored |  | 1d | 2026-07-31 | 2026-07-31 | 128 | 12d | 0d |  | TECNORED | 8h | 0207 | MECHANICAL |
| 130 | 1.4.7.3 | Atendimento de comentários |  | 1d | 2026-08-03 | 2026-08-03 | 129 | 12d | 0d |  | André | 8h | 0207 | MECHANICAL |
| 131 | 1.4.7.4 | Aprovação |  | 1d | 2026-08-04 | 2026-08-04 | 130 | 12d |  |  | TECNORED | 8h | 0207 | MECHANICAL |
| 132 | 1.4.8 | **AG-F0009-0207-MB-M-00003** | inactive | 5d | 2026-07-31 | 2026-08-06 |  | 10d |  |  | Felipe | 80h | 0207 | MECHANICAL |
| 133 | 1.4.8.1 | Emissão Inicial | inactive | 2d | 2026-07-31 | 2026-08-03 | 123 | 10d | 0d |  | Rodrigo | 16h | 0207 | MECHANICAL |
| 134 | 1.4.8.2 | Análise Tecnored | inactive | 1d | 2026-08-04 | 2026-08-04 | 133 | 10d | 0d |  | TECNORED | 8h | 0207 | MECHANICAL |
| 135 | 1.4.8.3 | Atendimento de comentários | inactive | 1d | 2026-08-05 | 2026-08-05 | 134 | 10d | 0d |  | André | 8h | 0207 | MECHANICAL |
| 136 | 1.4.8.4 | Aprovação | inactive | 1d | 2026-08-06 | 2026-08-06 | 135 | 10d |  |  | TECNORED | 8h | 0207 | MECHANICAL |
| 137 | 1.4.9 | **AG-F0009-0207-MB-M-00004** | inactive | 5d | 2026-07-31 | 2026-08-06 |  | 10d |  |  | Felipe | 80h | 0207 | MECHANICAL |
| 138 | 1.4.9.1 | Emissão Inicial | inactive | 2d | 2026-07-31 | 2026-08-03 | 128 | 10d | 0d |  | Rodrigo | 16h | 0207 | MECHANICAL |
| 139 | 1.4.9.2 | Análise Tecnored | inactive | 1d | 2026-08-04 | 2026-08-04 | 138 | 10d | 0d |  | TECNORED | 8h | 0207 | MECHANICAL |
| 140 | 1.4.9.3 | Atendimento de comentários | inactive | 1d | 2026-08-05 | 2026-08-05 | 139 | 10d | 0d |  | André | 8h | 0207 | MECHANICAL |
| 141 | 1.4.9.4 | Aprovação | inactive | 1d | 2026-08-06 | 2026-08-06 | 140 | 10d |  |  | TECNORED | 8h | 0207 | MECHANICAL |
| 142 | 1.4.10 | **ML-F0009-0207-MB-M-00000** |  | 6d | 2026-07-24 | 2026-07-31 |  | 8d |  |  | Felipe, André | 96h | 0207 | MECHANICAL |
| 143 | 1.4.10.1 | Emissão Inicial |  | 3d | 2026-07-24 | 2026-07-28 |  | 8d | 0d | start no earlier than 2026-07-24 | Rodrigo | 24h | 0207 | MECHANICAL |
| 144 | 1.4.10.2 | Análise Tecnored |  | 1d | 2026-07-29 | 2026-07-29 | 143 | 14d | 0d |  | TECNORED | 8h | 0207 | MECHANICAL |
| 145 | 1.4.10.3 | Atendimento de comentários |  | 1d | 2026-07-30 | 2026-07-30 | 144 | 14d | 0d |  | André | 8h | 0207 | MECHANICAL |
| 146 | 1.4.10.4 | Aprovação |  | 1d | 2026-07-31 | 2026-07-31 | 145 | 14d |  |  | TECNORED | 8h | 0207 | MECHANICAL |
| 147 | 1.4.11 | **ML-F0009-0207-MB-M-00001** | inactive | 6d | 2026-07-24 | 2026-07-31 |  | 5d |  |  | Felipe, André | 96h | 0207 | MECHANICAL |
| 148 | 1.4.11.1 | Emissão Inicial | inactive | 3d | 2026-07-24 | 2026-07-28 | 143SS | 5d | 0d |  | Rodrigo | 24h | 0207 | MECHANICAL |
| 149 | 1.4.11.2 | Análise Tecnored | inactive | 1d | 2026-07-29 | 2026-07-29 | 148 | 14d | 0d |  | TECNORED | 8h | 0207 | MECHANICAL |
| 150 | 1.4.11.3 | Atendimento de comentários | inactive | 1d | 2026-07-30 | 2026-07-30 | 149 | 14d | 0d |  | André | 8h | 0207 | MECHANICAL |
| 151 | 1.4.11.4 | Aprovação | inactive | 1d | 2026-07-31 | 2026-07-31 | 150 | 14d |  |  | TECNORED | 8h | 0207 | MECHANICAL |

| ID | WBS | Task | Type | Duration | Start | Finish | Predecessors | Total slack | Free slack | Resources | Work | COD_Projeto | Disciplina |
| --- | --- | --- | --- | --- | --- | --- | --- | --- | --- | --- | --- | --- | --- |
| 152 | 1.4.12 | **ML-F0009-0207-MB-M-00002** | inactive | 6d | 2026-07-29 | 2026-08-05 |  | -11d | 0d | Felipe, André | 96h | 0207 | MECHANICAL |
| 153 | 1.4.12.1 | Emissão Inicial | inactive | 3d | 2026-07-29 | 2026-07-31 | 143 | -11d | 0d | Rodrigo | 24h | 0207 | MECHANICAL |
| 154 | 1.4.12.2 | Análise Tecnored | inactive | 1d | 2026-08-03 | 2026-08-03 | 153 | 11d | 0d | TECNORED | 8h | 0207 | MECHANICAL |
| 155 | 1.4.12.3 | Atendimento de comentários | inactive | 1d | 2026-08-04 | 2026-08-04 | 154 | 11d | 0d | André | 8h | 0207 | MECHANICAL |
| 156 | 1.4.12.4 | Aprovação | inactive | 1d | 2026-08-05 | 2026-08-05 | 155 | 11d |  | TECNORED | 8h | 0207 | MECHANICAL |
| 157 | 1.4.13 | **ML-F0009-0207-MB-M-00003** | inactive | 6d | 2026-07-29 | 2026-08-05 |  | 5d |  | Felipe, André | 96h | 0207 | MECHANICAL |
| 158 | 1.4.13.1 | Emissão Inicial | inactive | 3d | 2026-07-29 | 2026-07-31 | 148 | 5d | 0d | Rodrigo | 24h | 0207 | MECHANICAL |
| 159 | 1.4.13.2 | Análise Tecnored | inactive | 1d | 2026-08-03 | 2026-08-03 | 158 | 11d | 0d | TECNORED | 8h | 0207 | MECHANICAL |
| 160 | 1.4.13.3 | Atendimento de comentários | inactive | 1d | 2026-08-04 | 2026-08-04 | 159 | 11d | 0d | André | 8h | 0207 | MECHANICAL |
| 161 | 1.4.13.4 | Aprovação | inactive | 1d | 2026-08-05 | 2026-08-05 | 160 | 11d |  | TECNORED | 8h | 0207 | MECHANICAL |
| 162 | 1.4.14 | **ML-F0009-0207-MB-M-00004** | inactive | 6d | 2026-08-03 | 2026-08-10 |  | -11d | 0d | Felipe, André | 96h | 0207 | MECHANICAL |
| 163 | 1.4.14.1 | Emissão Inicial | inactive | 3d | 2026-08-03 | 2026-08-05 | 153 | -11d | 0d | Rodrigo | 24h | 0207 | MECHANICAL |
| 164 | 1.4.14.2 | Análise Tecnored | inactive | 1d | 2026-08-06 | 2026-08-06 | 163 | 8d | 0d | TECNORED | 8h | 0207 | MECHANICAL |
| 165 | 1.4.14.3 | Atendimento de comentários | inactive | 1d | 2026-08-07 | 2026-08-07 | 164 | 8d | 0d | André | 8h | 0207 | MECHANICAL |
| 166 | 1.4.14.4 | Aprovação | inactive | 1d | 2026-08-10 | 2026-08-10 | 165 | 8d |  | TECNORED | 8h | 0207 | MECHANICAL |
| 167 | 1.4.15 | **ML-F0009-0207-MB-M-00005** | inactive | 6d | 2026-08-03 | 2026-08-10 |  | 5d |  | Felipe, André | 96h | 0207 | MECHANICAL |
| 168 | 1.4.15.1 | Emissão Inicial | inactive | 3d | 2026-08-03 | 2026-08-05 | 158 | 5d | 0d | Rodrigo | 24h | 0207 | MECHANICAL |
| 169 | 1.4.15.2 | Análise Tecnored | inactive | 1d | 2026-08-06 | 2026-08-06 | 168 | 8d | 0d | TECNORED | 8h | 0207 | MECHANICAL |
| 170 | 1.4.15.3 | Atendimento de comentários | inactive | 1d | 2026-08-07 | 2026-08-07 | 169 | 8d | 0d | André | 8h | 0207 | MECHANICAL |
| 171 | 1.4.15.4 | Aprovação | inactive | 1d | 2026-08-10 | 2026-08-10 | 170 | 8d |  | TECNORED | 8h | 0207 | MECHANICAL |
| 172 | 1.4.16 | **ML-F0009-0207-MB-M-00006** | inactive | 6d | 2026-08-06 | 2026-08-13 |  | -11d | 0d | Felipe, André | 96h | 0207 | MECHANICAL |
| 173 | 1.4.16.1 | Emissão Inicial | inactive | 3d | 2026-08-06 | 2026-08-10 | 163 | -11d | 0d | Rodrigo | 24h | 0207 | MECHANICAL |
| 174 | 1.4.16.2 | Análise Tecnored | inactive | 1d | 2026-08-11 | 2026-08-11 | 173 | 1d | 0d | TECNORED | 8h | 0207 | MECHANICAL |
| 175 | 1.4.16.3 | Atendimento de comentários | inactive | 1d | 2026-08-12 | 2026-08-12 | 174 | 1d | 0d | André | 8h | 0207 | MECHANICAL |
| 176 | 1.4.16.4 | Aprovação | inactive | 1d | 2026-08-13 | 2026-08-13 | 175 | 5d |  | TECNORED | 8h | 0207 | MECHANICAL |

| ID | WBS | Task | Type | Duration | Start | Finish | Predecessors | Total slack | Free slack | Constraint | Resources | Work | COD_Projeto | Disciplina |
| --- | --- | --- | --- | --- | --- | --- | --- | --- | --- | --- | --- | --- | --- | --- |
| 177 | 1.4.17 | **ML-F0009-0207-MB-M-00007** | inactive | 6d | 2026-08-06 | 2026-08-13 |  | 5d |  |  | Felipe, André | 96h | 0207 | MECHANICAL |
| 178 | 1.4.17.1 | Emissão Inicial | inactive | 3d | 2026-08-06 | 2026-08-10 | 168 | 5d | 0d |  | Rodrigo | 24h | 0207 | MECHANICAL |
| 179 | 1.4.17.2 | Análise Tecnored | inactive | 1d | 2026-08-11 | 2026-08-11 | 178 | 5d | 0d |  | TECNORED | 8h | 0207 | MECHANICAL |
| 180 | 1.4.17.3 | Atendimento de comentários | inactive | 1d | 2026-08-12 | 2026-08-12 | 179 | 5d | 0d |  | André | 8h | 0207 | MECHANICAL |
| 181 | 1.4.17.4 | Aprovação | inactive | 1d | 2026-08-13 | 2026-08-13 | 180 | 5d |  |  | TECNORED | 8h | 0207 | MECHANICAL |
| 182 | 1.4.18 | **ML-F0009-0207-MB-M-00008** | inactive | 11d | 2026-07-31 | 2026-08-14 |  | -4d | 0d |  | Felipe, André | 136h | 0207 | MECHANICAL |
| 183 | 1.4.18.1 | Emissão Inicial | inactive | 3d | 2026-08-11 | 2026-08-13 | 173 | -11d | 0d |  | Rodrigo | 24h | 0207 | MECHANICAL |
| 184 | 1.4.18.2 | Análise Tecnored | inactive | 1d | 2026-08-14 | 2026-08-14 | 183 | 4d |  |  | TECNORED | 8h | 0207 | MECHANICAL |
| 185 | 1.4.18.3 | Atendimento de comentários | inactive | 1d | 2026-07-31 | 2026-07-31 | 303 | 13d | 0d |  | André | 8h | 0207 | MECHANICAL |
| 186 | 1.4.18.4 | Aprovação | inactive | 1d | 2026-08-03 | 2026-08-03 | 185 | 13d |  |  | TECNORED | 8h | 0207 | MECHANICAL |
| 187 | 1.4.19 | **AG-F0009-0207-MB-M-00005** |  | 6d | 2026-07-21 | 2026-07-28 |  | 5d |  |  | André, Felipe | 96h | 0207 | MECHANICAL |
| 188 | 1.4.19.1 | Emissão Inicial |  | 3d | 2026-07-21 | 2026-07-23 | 77 | 5d | 0d | finish no earlier than 2026-07-23 | Rodrigo | 24h | 0207 | MECHANICAL |
| 189 | 1.4.19.2 | Análise Tecnored |  | 1d | 2026-07-24 | 2026-07-24 | 188 | 17d | 0d |  | TECNORED | 8h | 0207 | MECHANICAL |
| 190 | 1.4.19.3 | Atendimento de comentários |  | 1d | 2026-07-27 | 2026-07-27 | 189 | 17d | 0d |  | André | 8h | 0207 | MECHANICAL |
| 191 | 1.4.19.4 | Aprovação |  | 1d | 2026-07-28 | 2026-07-28 | 190 | 17d |  |  | TECNORED | 8h | 0207 | MECHANICAL |
| 192 | 1.4.20 | **AG-F0009-0207-MB-M-00006** |  | 6d | 2026-07-24 | 2026-07-31 |  | 8d |  |  | Felipe, André | 96h | 0207 | MECHANICAL |
| 193 | 1.4.20.1 | Emissão Inicial |  | 3d | 2026-07-24 | 2026-07-28 | 188, 263 | 8d | 0d | finish no earlier than 2026-07-28 | Rodrigo | 24h | 0207 | MECHANICAL |
| 194 | 1.4.20.2 | Análise Tecnored |  | 1d | 2026-07-29 | 2026-07-29 | 193 | 14d | 0d |  | TECNORED | 8h | 0207 | MECHANICAL |
| 195 | 1.4.20.3 | Atendimento de comentários |  | 1d | 2026-07-30 | 2026-07-30 | 194 | 14d | 0d |  | André | 8h | 0207 | MECHANICAL |
| 196 | 1.4.20.4 | Aprovação |  | 1d | 2026-07-31 | 2026-07-31 | 195 | 14d |  |  | TECNORED | 8h | 0207 | MECHANICAL |
| 197 | 1.4.21 | **PL-F0009-0207-MB-M-00001** | inactive | 5d | 2026-08-06 | 2026-08-12 |  | 2d |  |  | Ailton | 80h | 0207 | MECHANICAL |
| 198 | 1.4.21.1 | Emissão Inicial | inactive | 2d | 2026-08-06 | 2026-08-07 | 253 | 2d | 0d |  | Rodrigo | 16h | 0207 | MECHANICAL |
| 199 | 1.4.21.2 | Análise Tecnored | inactive | 1d | 2026-08-10 | 2026-08-10 | 198 | 6d | 0d |  | TECNORED | 8h | 0207 | MECHANICAL |
| 200 | 1.4.21.3 | Atendimento de comentários | inactive | 1d | 2026-08-11 | 2026-08-11 | 199 | 6d | 0d |  | André | 8h | 0207 | MECHANICAL |
| 201 | 1.4.21.4 | Aprovação | inactive | 1d | 2026-08-12 | 2026-08-12 | 200 | 6d |  |  | TECNORED | 8h | 0207 | MECHANICAL |

| ID | WBS | Task | Type | Duration | Start | Finish | Predecessors | Total slack | Free slack | Constraint | Resources | Work | COD_Projeto | Disciplina |
| --- | --- | --- | --- | --- | --- | --- | --- | --- | --- | --- | --- | --- | --- | --- |
| 202 | 1.4.22 | **AG-F0009-0207-MB-M-00007** |  | 6d | 2026-07-24 | 2026-07-31 |  | 8d |  |  | Felipe, André | 96h | 0207 | MECHANICAL |
| 203 | 1.4.22.1 | Emissão Inicial |  | 3d | 2026-07-24 | 2026-07-28 | 188, 263 | 8d | 0d | finish no earlier than 2026-07-28 | Rodrigo | 24h | 0207 | MECHANICAL |
| 204 | 1.4.22.2 | Análise Tecnored |  | 1d | 2026-07-29 | 2026-07-29 | 203 | 14d | 0d |  | TECNORED | 8h | 0207 | MECHANICAL |
| 205 | 1.4.22.3 | Atendimento de comentários |  | 1d | 2026-07-30 | 2026-07-30 | 204 | 14d | 0d |  | André | 8h | 0207 | MECHANICAL |
| 206 | 1.4.22.4 | Aprovação |  | 1d | 2026-07-31 | 2026-07-31 | 205 | 14d |  |  | TECNORED | 8h | 0207 | MECHANICAL |
| 207 | 1.4.23 | **PL-F0009-0207-MB-M-00002** | inactive | 5d | 2026-08-06 | 2026-08-12 |  | 2d |  |  | Ailton | 80h | 0207 | MECHANICAL |
| 208 | 1.4.23.1 | Emissão Inicial | inactive | 2d | 2026-08-06 | 2026-08-07 | 198SS | 2d | 0d |  | Rodrigo | 16h | 0207 | MECHANICAL |
| 209 | 1.4.23.2 | Análise Tecnored | inactive | 1d | 2026-08-10 | 2026-08-10 | 208 | 6d | 0d |  | TECNORED | 8h | 0207 | MECHANICAL |
| 210 | 1.4.23.3 | Atendimento de comentários | inactive | 1d | 2026-08-11 | 2026-08-11 | 209 | 6d | 0d |  | André | 8h | 0207 | MECHANICAL |
| 211 | 1.4.23.4 | Aprovação | inactive | 1d | 2026-08-12 | 2026-08-12 | 210 | 6d |  |  | TECNORED | 8h | 0207 | MECHANICAL |
| 212 | 1.4.24 | **AG-F0009-0207-MB-M-00008** |  | 6d | 2026-07-24 | 2026-07-31 |  | 5d |  |  | Felipe, André | 96h | 0207 | MECHANICAL |
| 213 | 1.4.24.1 | Emissão Inicial |  | 3d | 2026-07-24 | 2026-07-28 | 188 | 5d | 0d | finish no earlier than 2026-07-28 | Rodrigo | 24h | 0207 | MECHANICAL |
| 214 | 1.4.24.2 | Análise Tecnored |  | 1d | 2026-07-29 | 2026-07-29 | 213 | 14d | 0d |  | TECNORED | 8h | 0207 | MECHANICAL |
| 215 | 1.4.24.3 | Atendimento de comentários |  | 1d | 2026-07-30 | 2026-07-30 | 214 | 14d | 0d |  | André | 8h | 0207 | MECHANICAL |
| 216 | 1.4.24.4 | Aprovação |  | 1d | 2026-07-31 | 2026-07-31 | 215 | 14d |  |  | TECNORED | 8h | 0207 | MECHANICAL |
| 217 | 1.4.25 | **PL-F0009-0207-MB-M-00003** | inactive | 5d | 2026-08-10 | 2026-08-14 |  | 2d |  |  | Ailton | 80h | 0207 | MECHANICAL |
| 218 | 1.4.25.1 | Emissão Inicial | inactive | 2d | 2026-08-10 | 2026-08-11 | 208 | 2d | 0d |  | Rodrigo | 16h | 0207 | MECHANICAL |
| 219 | 1.4.25.2 | Análise Tecnored | inactive | 1d | 2026-08-12 | 2026-08-12 | 218 | 4d | 0d |  | TECNORED | 8h | 0207 | MECHANICAL |
| 220 | 1.4.25.3 | Atendimento de comentários | inactive | 1d | 2026-08-13 | 2026-08-13 | 219 | 4d | 0d |  | André | 8h | 0207 | MECHANICAL |
| 221 | 1.4.25.4 | Aprovação | inactive | 1d | 2026-08-14 | 2026-08-14 | 220 | 4d |  |  | TECNORED | 8h | 0207 | MECHANICAL |
| 222 | 1.4.26 | **AG-F0009-0207-MB-M-00009** |  | 6d | 2026-07-24 | 2026-07-31 |  | 8d |  |  | Felipe, André | 96h | 0207 | MECHANICAL |
| 223 | 1.4.26.1 | Emissão Inicial |  | 3d | 2026-07-24 | 2026-07-28 | 188, 263 | 8d | 0d | finish no earlier than 2026-07-28 | Rodrigo | 24h | 0207 | MECHANICAL |
| 224 | 1.4.26.2 | Análise Tecnored |  | 1d | 2026-07-29 | 2026-07-29 | 223 | 14d | 0d |  | TECNORED | 8h | 0207 | MECHANICAL |
| 225 | 1.4.26.3 | Atendimento de comentários |  | 1d | 2026-07-30 | 2026-07-30 | 224 | 14d | 0d |  | André | 8h | 0207 | MECHANICAL |
| 226 | 1.4.26.4 | Aprovação |  | 1d | 2026-07-31 | 2026-07-31 | 225 | 14d |  |  | TECNORED | 8h | 0207 | MECHANICAL |

| ID | WBS | Task | Type | Duration | Start | Finish | Predecessors | Total slack | Free slack | Constraint | Resources | Work | COD_Projeto | Disciplina |
| --- | --- | --- | --- | --- | --- | --- | --- | --- | --- | --- | --- | --- | --- | --- |
| 227 | 1.4.27 | **PL-F0009-0207-MB-M-00004** | inactive | 5d | 2026-08-10 | 2026-08-14 |  | 2d |  |  | Ailton | 80h | 0207 | MECHANICAL |
| 228 | 1.4.27.1 | Emissão Inicial | inactive | 2d | 2026-08-10 | 2026-08-11 | 198 | 2d | 0d |  | Rodrigo | 16h | 0207 | MECHANICAL |
| 229 | 1.4.27.2 | Análise Tecnored | inactive | 1d | 2026-08-12 | 2026-08-12 | 228 | 4d | 0d |  | TECNORED | 8h | 0207 | MECHANICAL |
| 230 | 1.4.27.3 | Atendimento de comentários | inactive | 1d | 2026-08-13 | 2026-08-13 | 229 | 4d | 0d |  | André | 8h | 0207 | MECHANICAL |
| 231 | 1.4.27.4 | Aprovação | inactive | 1d | 2026-08-14 | 2026-08-14 | 230 | 4d |  |  | TECNORED | 8h | 0207 | MECHANICAL |
| 232 | 1.4.28 | **AG-F0009-0207-MB-M-00010** |  | 6d | 2026-07-29 | 2026-08-05 |  | 5d |  |  | Felipe, André | 96h | 0207 | MECHANICAL |
| 233 | 1.4.28.1 | Emissão Inicial |  | 3d | 2026-07-29 | 2026-07-31 | 213 | 5d | 0d | finish no earlier than 2026-07-28 | Rodrigo | 24h | 0207 | MECHANICAL |
| 234 | 1.4.28.2 | Análise Tecnored |  | 1d | 2026-08-03 | 2026-08-03 | 233 | 11d | 0d |  | TECNORED | 8h | 0207 | MECHANICAL |
| 235 | 1.4.28.3 | Atendimento de comentários |  | 1d | 2026-08-04 | 2026-08-04 | 234 | 11d | 0d |  | André | 8h | 0207 | MECHANICAL |
| 236 | 1.4.28.4 | Aprovação |  | 1d | 2026-08-05 | 2026-08-05 | 235 | 11d |  |  | TECNORED | 8h | 0207 | MECHANICAL |
| 237 | 1.4.29 | **PL-F0009-0207-MB-M-00005** | inactive | 5d | 2026-08-10 | 2026-08-14 |  | 4d |  |  | Ailton | 80h | 0207 | MECHANICAL |
| 238 | 1.4.29.1 | Emissão Inicial | inactive | 2d | 2026-08-10 | 2026-08-11 | 208 | 4d | 0d |  | Rodrigo | 16h | 0207 | MECHANICAL |
| 239 | 1.4.29.2 | Análise Tecnored | inactive | 1d | 2026-08-12 | 2026-08-12 | 238 | 4d | 0d |  | TECNORED | 8h | 0207 | MECHANICAL |
| 240 | 1.4.29.3 | Atendimento de comentários | inactive | 1d | 2026-08-13 | 2026-08-13 | 239 | 4d | 0d |  | André | 8h | 0207 | MECHANICAL |
| 241 | 1.4.29.4 | Aprovação | inactive | 1d | 2026-08-14 | 2026-08-14 | 240 | 4d |  |  | TECNORED | 8h | 0207 | MECHANICAL |
| 242 | 1.4.30 | **AG-F0009-0207-MB-M-00011** | inactive | 5d | 2026-07-29 | 2026-08-04 |  | 12d |  |  | Felipe, André | 80h | 0207 | MECHANICAL |
| 243 | 1.4.30.1 | Emissão Inicial | inactive | 2d | 2026-07-29 | 2026-07-30 | 223 | 12d | 0d |  | Rodrigo | 16h | 0207 | MECHANICAL |
| 244 | 1.4.30.2 | Análise Tecnored | inactive | 1d | 2026-07-31 | 2026-07-31 | 243 | 12d | 0d |  | TECNORED | 8h | 0207 | MECHANICAL |
| 245 | 1.4.30.3 | Atendimento de comentários | inactive | 1d | 2026-08-03 | 2026-08-03 | 244 | 12d | 0d |  | André | 8h | 0207 | MECHANICAL |
| 246 | 1.4.30.4 | Aprovação | inactive | 1d | 2026-08-04 | 2026-08-04 | 245 | 12d |  |  | TECNORED | 8h | 0207 | MECHANICAL |
| 247 | 1.4.31 | **PL-F0009-0207-MB-M-00006** | inactive | 5d | 2026-08-12 | 2026-08-18 |  | 2d |  |  | Ailton | 80h | 0207 | MECHANICAL |
| 248 | 1.4.31.1 | Emissão Inicial | inactive | 2d | 2026-08-12 | 2026-08-13 | 218 | 2d | 0d |  | Rodrigo | 16h | 0207 | MECHANICAL |
| 249 | 1.4.31.2 | Análise Tecnored | inactive | 1d | 2026-08-14 | 2026-08-14 | 248 | 2d | 0d |  | TECNORED | 8h | 0207 | MECHANICAL |
| 250 | 1.4.31.3 | Atendimento de comentários | inactive | 1d | 2026-08-17 | 2026-08-17 | 249 | 2d | 0d |  | André | 8h | 0207 | MECHANICAL |
| 251 | 1.4.31.4 | Aprovação | inactive | 1d | 2026-08-18 | 2026-08-18 | 250 | 2d |  |  | TECNORED | 8h | 0207 | MECHANICAL |

| ID | WBS | Task | Type | Duration | Start | Finish | Predecessors | Total slack | Free slack | Constraint | Resources | Work | COD_Projeto | Disciplina |
| --- | --- | --- | --- | --- | --- | --- | --- | --- | --- | --- | --- | --- | --- | --- |
| 252 | 1.4.32 | **AG-F0009-0207-MB-M-00012** |  | 6d | 2026-08-03 | 2026-08-10 |  | 8d |  |  | André | 96h | 0207 | MECHANICAL |
| 253 | 1.4.32.1 | Emissão Inicial |  | 3d | 2026-08-03 | 2026-08-05 | 233 | 8d | 0d | finish no earlier than 2026-07-31 | Rodrigo | 24h | 0207 | MECHANICAL |
| 254 | 1.4.32.2 | Análise Tecnored |  | 1d | 2026-08-06 | 2026-08-06 | 253 | 8d | 0d |  | TECNORED | 8h | 0207 | MECHANICAL |
| 255 | 1.4.32.3 | Atendimento de comentários |  | 1d | 2026-08-07 | 2026-08-07 | 254 | 8d | 0d |  | André | 8h | 0207 | MECHANICAL |
| 256 | 1.4.32.4 | Aprovação |  | 1d | 2026-08-10 | 2026-08-10 | 255 | 8d |  |  | TECNORED | 8h | 0207 | MECHANICAL |
| 257 | 1.4.33 | **PL-F0009-0207-MB-M-00007** | inactive | 5d | 2026-08-12 | 2026-08-18 |  | 2d |  |  | Ailton | 80h | 0207 | MECHANICAL |
| 258 | 1.4.33.1 | Emissão Inicial | inactive | 2d | 2026-08-12 | 2026-08-13 | 228 | 2d | 0d |  | Rodrigo | 16h | 0207 | MECHANICAL |
| 259 | 1.4.33.2 | Análise Tecnored | inactive | 1d | 2026-08-14 | 2026-08-14 | 258 | 2d | 0d |  | TECNORED | 8h | 0207 | MECHANICAL |
| 260 | 1.4.33.3 | Atendimento de comentários | inactive | 1d | 2026-08-17 | 2026-08-17 | 259 | 2d | 0d |  | André | 8h | 0207 | MECHANICAL |
| 261 | 1.4.33.4 | Aprovação | inactive | 1d | 2026-08-18 | 2026-08-18 | 260 | 2d |  |  | TECNORED | 8h | 0207 | MECHANICAL |
| 262 | 1.4.34 | **FD-F0009-0207-MB-M-00001** |  | 4.5d | 2026-07-21 | 2026-07-27 |  | 8d |  |  | André, Felipe | 72h | 0207 | MECHANICAL |
| 263 | 1.4.34.1 | Emissão Inicial |  | 3d | 2026-07-21 | 2026-07-23 | 77 | 8d | 0d | finish no earlier than 2026-07-23 | Rodrigo | 24h | 0207 | MECHANICAL |
| 264 | 1.4.34.2 | Análise Tecnored |  | 0.5d | 2026-07-24 | 2026-07-24 | 263 | 18.5d | 0d |  | TECNORED | 4h | 0207 | MECHANICAL |
| 265 | 1.4.34.3 | Atendimento de comentários |  | 0.5d | 2026-07-24 | 2026-07-24 | 264 | 18.5d | 0d |  | André | 4h | 0207 | MECHANICAL |
| 266 | 1.4.34.4 | Aprovação |  | 0.5d | 2026-07-27 | 2026-07-27 | 265 | 18.5d |  |  | TECNORED | 4h | 0207 | MECHANICAL |
| 267 | 1.4.35 | **FD-F0009-0207-MB-M-00002** |  | 4.5d | 2026-07-24 | 2026-07-30 |  | 8d |  |  | Felipe, André | 72h | 0207 | MECHANICAL |
| 268 | 1.4.35.1 | Emissão Inicial |  | 3d | 2026-07-24 | 2026-07-28 | 263, 188 | 8d | 0d | finish no earlier than 2026-07-28 | Rodrigo | 24h | 0207 | MECHANICAL |
| 269 | 1.4.35.2 | Análise Tecnored |  | 0.5d | 2026-07-29 | 2026-07-29 | 268 | 15.5d | 0d |  | TECNORED | 4h | 0207 | MECHANICAL |
| 270 | 1.4.35.3 | Atendimento de comentários |  | 0.5d | 2026-07-29 | 2026-07-29 | 269 | 15.5d | 0d |  | André | 4h | 0207 | MECHANICAL |
| 271 | 1.4.35.4 | Aprovação |  | 0.5d | 2026-07-30 | 2026-07-30 | 270 | 15.5d |  |  | TECNORED | 4h | 0207 | MECHANICAL |
| 272 | 1.4.36 | **FD-F0009-0207-MB-M-00003** |  | 4.5d | 2026-07-24 | 2026-07-30 |  | 8d |  |  | Felipe, André | 72h | 0207 | MECHANICAL |
| 273 | 1.4.36.1 | Emissão Inicial |  | 3d | 2026-07-24 | 2026-07-28 | 188, 263 | 8d | 0d | finish no earlier than 2026-07-28 | Rodrigo | 24h | 0207 | MECHANICAL |
| 274 | 1.4.36.2 | Análise Tecnored |  | 0.5d | 2026-07-29 | 2026-07-29 | 273 | 15.5d | 0d |  | TECNORED | 4h | 0207 | MECHANICAL |
| 275 | 1.4.36.3 | Atendimento de comentários |  | 0.5d | 2026-07-29 | 2026-07-29 | 274 | 15.5d | 0d |  | André | 4h | 0207 | MECHANICAL |
| 276 | 1.4.36.4 | Aprovação |  | 0.5d | 2026-07-30 | 2026-07-30 | 275 | 15.5d |  |  | TECNORED | 4h | 0207 | MECHANICAL |

| ID | WBS | Task | Type | Duration | Start | Finish | Predecessors | Total slack | Free slack | Constraint | Resources | Work | COD_Projeto | Disciplina |
| --- | --- | --- | --- | --- | --- | --- | --- | --- | --- | --- | --- | --- | --- | --- |
| 277 | 1.4.37 | **FD-F0009-0207-MB-M-00004** |  | 4.5d | 2026-07-24 | 2026-07-30 |  | 8d |  |  | Felipe, André | 72h | 0207 | MECHANICAL |
| 278 | 1.4.37.1 | Emissão Inicial |  | 3d | 2026-07-24 | 2026-07-28 | 188, 263 | 8d | 0d | finish no earlier than 2026-07-28 | Rodrigo | 24h | 0207 | MECHANICAL |
| 279 | 1.4.37.2 | Análise Tecnored |  | 0.5d | 2026-07-29 | 2026-07-29 | 278 | 15.5d | 0d |  | TECNORED | 4h | 0207 | MECHANICAL |
| 280 | 1.4.37.3 | Atendimento de comentários |  | 0.5d | 2026-07-29 | 2026-07-29 | 279 | 15.5d | 0d |  | André | 4h | 0207 | MECHANICAL |
| 281 | 1.4.37.4 | Aprovação |  | 0.5d | 2026-07-30 | 2026-07-30 | 280 | 15.5d |  |  | TECNORED | 4h | 0207 | MECHANICAL |
| 282 | 1.4.38 | **FD-F0009-0207-MB-M-00005** |  | 4.5d | 2026-07-24 | 2026-07-30 |  | 8d |  |  | Felipe, André | 72h | 0207 | MECHANICAL |
| 283 | 1.4.38.1 | Emissão Inicial |  | 3d | 2026-07-24 | 2026-07-28 | 188, 263 | 8d | 0d | finish no earlier than 2026-07-28 | Rodrigo | 24h | 0207 | MECHANICAL |
| 284 | 1.4.38.2 | Análise Tecnored |  | 0.5d | 2026-07-29 | 2026-07-29 | 283 | 15.5d | 0d |  | TECNORED | 4h | 0207 | MECHANICAL |
| 285 | 1.4.38.3 | Atendimento de comentários |  | 0.5d | 2026-07-29 | 2026-07-29 | 284 | 15.5d | 0d |  | André | 4h | 0207 | MECHANICAL |
| 286 | 1.4.38.4 | Aprovação |  | 0.5d | 2026-07-30 | 2026-07-30 | 285 | 15.5d |  |  | TECNORED | 4h | 0207 | MECHANICAL |
| 287 | 1.4.39 | **FD-F0009-0207-MB-M-00006** | inactive | 2.5d | 2026-07-29 | 2026-07-31 |  | 13.5d |  |  | Felipe, André | 40h | 0207 | MECHANICAL |
| 288 | 1.4.39.1 | Emissão Inicial | inactive | 1d | 2026-07-29 | 2026-07-29 | 283 | 13.5d | 0d |  | Rodrigo | 8h | 0207 | MECHANICAL |
| 289 | 1.4.39.2 | Análise Tecnored | inactive | 0.5d | 2026-07-30 | 2026-07-30 | 288 | 14.5d | 0d |  | TECNORED | 4h | 0207 | MECHANICAL |
| 290 | 1.4.39.3 | Atendimento de comentários | inactive | 0.5d | 2026-07-30 | 2026-07-30 | 289 | 14.5d | 0d |  | André | 4h | 0207 | MECHANICAL |
| 291 | 1.4.39.4 | Aprovação | inactive | 0.5d | 2026-07-31 | 2026-07-31 | 290 | 14.5d |  |  | TECNORED | 4h | 0207 | MECHANICAL |
| 292 | 1.4.40 | **FD-F0009-0207-MB-M-00007** | inactive | 2.5d | 2026-07-30 | 2026-08-03 |  | 13.5d |  |  | Felipe, André | 40h | 0207 | MECHANICAL |
| 293 | 1.4.40.1 | Emissão Inicial | inactive | 1d | 2026-07-30 | 2026-07-30 | 288 | 13.5d | 0d |  | Rodrigo | 8h | 0207 | MECHANICAL |
| 294 | 1.4.40.2 | Análise Tecnored | inactive | 0.5d | 2026-07-31 | 2026-07-31 | 293 | 13.5d | 0d |  | TECNORED | 4h | 0207 | MECHANICAL |
| 295 | 1.4.40.3 | Atendimento de comentários | inactive | 0.5d | 2026-07-31 | 2026-07-31 | 294 | 13.5d | 0d |  | André | 4h | 0207 | MECHANICAL |
| 296 | 1.4.40.4 | Aprovação | inactive | 0.5d | 2026-08-03 | 2026-08-03 | 295 | 13.5d |  |  | TECNORED | 4h | 0207 | MECHANICAL |
| 297 | 1.4.41 | **FD-F0009-0207-MB-M-00008** |  | 4.5d | 2026-08-03 | 2026-08-07 |  | 9.5d |  |  | André | 72h | 0207 | MECHANICAL |
| 298 | 1.4.41.1 | Emissão Inicial |  | 3d | 2026-08-03 | 2026-08-05 | 143, 193, 203, 213, 223, 233, 268, 273, 278, 283 | 9.5d | 0d | finish no earlier than 2026-07-31 | Rodrigo | 24h | 0207 | MECHANICAL |
| 299 | 1.4.41.2 | Análise Tecnored |  | 0.5d | 2026-08-06 | 2026-08-06 | 298 | 9.5d | 0d |  | TECNORED | 4h | 0207 | MECHANICAL |
| 300 | 1.4.41.3 | Atendimento de comentários |  | 0.5d | 2026-08-06 | 2026-08-06 | 299 | 9.5d | 0d |  | André | 4h | 0207 | MECHANICAL |
| 301 | 1.4.41.4 | Aprovação |  | 0.5d | 2026-08-07 | 2026-08-07 | 300 | 9.5d |  |  | TECNORED | 4h | 0207 | MECHANICAL |

| ID | WBS | Task | Type | Duration | Start | Finish | Predecessors | Total slack | Free slack | Constraint | Resources | Work | COD_Projeto | Disciplina |
| --- | --- | --- | --- | --- | --- | --- | --- | --- | --- | --- | --- | --- | --- | --- |
| 302 | 1.4.42 | **RL-F0009-0207-MB-M-00001** |  | 5d | 2026-07-29 | 2026-08-04 |  | 12d |  |  | Everton, Ricardo | 80h | 0207 | MECHANICAL |
| 303 | 1.4.42.1 | Emissão Inicial |  | 2d | 2026-07-29 | 2026-07-30 | 173 | 12d | 0d |  | Rodrigo | 16h | 0207 | MECHANICAL |
| 304 | 1.4.42.2 | Análise Tecnored |  | 1d | 2026-07-31 | 2026-07-31 | 303 | 12d | 0d |  | TECNORED | 8h | 0207 | MECHANICAL |
| 305 | 1.4.42.3 | Atendimento de comentários |  | 1d | 2026-08-03 | 2026-08-03 | 304 | 12d | 0d |  | André | 8h | 0207 | MECHANICAL |
| 306 | 1.4.42.4 | Aprovação |  | 1d | 2026-08-04 | 2026-08-04 | 305 | 12d |  |  | TECNORED | 8h | 0207 | MECHANICAL |
| 307 | 1.4.43 | **RL-F0009-0207-MB-M-00002** |  | 5d | 2026-07-29 | 2026-08-04 |  | 12d |  |  | Everton, Ricardo | 80h | 0207 | MECHANICAL |
| 308 | 1.4.43.1 | Emissão Inicial |  | 2d | 2026-07-29 | 2026-07-30 | 175 | 12d | 0d |  | Rodrigo | 16h | 0207 | MECHANICAL |
| 309 | 1.4.43.2 | Análise Tecnored |  | 1d | 2026-07-31 | 2026-07-31 | 308 | 12d | 0d |  | TECNORED | 8h | 0207 | MECHANICAL |
| 310 | 1.4.43.3 | Atendimento de comentários |  | 1d | 2026-08-03 | 2026-08-03 | 309 | 12d | 0d |  | André | 8h | 0207 | MECHANICAL |
| 311 | 1.4.43.4 | Aprovação |  | 1d | 2026-08-04 | 2026-08-04 | 310 | 12d |  |  | TECNORED | 8h | 0207 | MECHANICAL |
| 312 | 1.5 | **UTILITIES SYSTEMS** |  | 12d | 2026-07-21 | 2026-08-05 |  | 11d |  |  |  | 432h |  |  |
| 313 | 1.5.1 | **DB-F0009-0207-MB-U-00001** | inactive | 4d | 2026-07-21 | 2026-07-24 |  | 12d |  |  | André | 64h | 0207 | UTILITIES SYSTEMS |
| 314 | 1.5.1.1 | Emissão Inicial | inactive | 1d | 2026-07-21 | 2026-07-21 | 77 | 12d | 0d |  | Rodrigo | 8h | 0207 | UTILITIES SYSTEMS |
| 315 | 1.5.1.2 | Análise Tecnored | inactive | 1d | 2026-07-22 | 2026-07-22 | 314 | 19d | 0d |  | TECNORED | 8h | 0207 | UTILITIES SYSTEMS |
| 316 | 1.5.1.3 | Atendimento de comentários | inactive | 1d | 2026-07-23 | 2026-07-23 | 315 | 19d | 0d |  | André | 8h | 0207 | UTILITIES SYSTEMS |
| 317 | 1.5.1.4 | Aprovação | inactive | 1d | 2026-07-24 | 2026-07-24 | 316 | 19d |  |  | TECNORED | 8h | 0207 | UTILITIES SYSTEMS |
| 318 | 1.5.2 | **FG-F0009-0000-GE-U-00001** |  | 4d | 2026-07-23 | 2026-07-28 |  | 11d |  |  | Calebe | 64h | 0207 | UTILITIES SYSTEMS |
| 319 | 1.5.2.1 | Emissão Inicial |  | 2d | 2026-07-23 | 2026-07-24 | 314 | 11d | 0d | finish no earlier than 2026-07-24 | Rodrigo | 16h | 0207 | UTILITIES SYSTEMS |
| 320 | 1.5.2.2 | Análise Tecnored |  | 1d | 2026-07-27 | 2026-07-27 | 319 | 17d | 0d |  | TECNORED | 8h | 0207 | UTILITIES SYSTEMS |
| 321 | 1.5.2.3 | Atendimento de comentários |  | 0.5d | 2026-07-28 | 2026-07-28 | 320 | 17d | 0d |  | André | 4h | 0207 | UTILITIES SYSTEMS |
| 322 | 1.5.2.4 | Aprovação |  | 0.5d | 2026-07-28 | 2026-07-28 | 321 | 17d |  |  | TECNORED | 4h | 0207 | UTILITIES SYSTEMS |
| 323 | 1.5.3 | **FG-F0009-0000-GE-U-00002** |  | 4d | 2026-07-27 | 2026-07-30 |  | 11d |  |  | Calebe | 64h | 0207 | UTILITIES SYSTEMS |
| 324 | 1.5.3.1 | Emissão Inicial |  | 2d | 2026-07-27 | 2026-07-28 | 319 | 11d | 0d | finish no earlier than 2026-07-24 | Rodrigo | 16h | 0207 | UTILITIES SYSTEMS |
| 325 | 1.5.3.2 | Análise Tecnored |  | 1d | 2026-07-29 | 2026-07-29 | 324 | 15d | 0d |  | TECNORED | 8h | 0207 | UTILITIES SYSTEMS |
| 326 | 1.5.3.3 | Atendimento de comentários |  | 0.5d | 2026-07-30 | 2026-07-30 | 325 | 15d | 0d |  | André | 4h | 0207 | UTILITIES SYSTEMS |
| 327 | 1.5.3.4 | Aprovação |  | 0.5d | 2026-07-30 | 2026-07-30 | 326 | 15d |  |  | TECNORED | 4h | 0207 | UTILITIES SYSTEMS |

| ID | WBS | Task | Type | Duration | Start | Finish | Predecessors | Total slack | Free slack | Constraint | Resources | Work | COD_Projeto | Disciplina |
| --- | --- | --- | --- | --- | --- | --- | --- | --- | --- | --- | --- | --- | --- | --- |
| 328 | 1.5.4 | **FG-F0009-0000-GE-U-00003** |  | 4d | 2026-07-29 | 2026-08-03 |  | 11d |  |  | Calebe | 64h | 0207 | UTILITIES SYSTEMS |
| 329 | 1.5.4.1 | Emissão Inicial |  | 2d | 2026-07-29 | 2026-07-30 | 324 | 11d | 0d | finish no earlier than 2026-07-24 | Rodrigo | 16h | 0207 | UTILITIES SYSTEMS |
| 330 | 1.5.4.2 | Análise Tecnored |  | 1d | 2026-07-31 | 2026-07-31 | 329 | 13d | 0d |  | TECNORED | 8h | 0207 | UTILITIES SYSTEMS |
| 331 | 1.5.4.3 | Atendimento de comentários |  | 0.5d | 2026-08-03 | 2026-08-03 | 330 | 13d | 0d |  | André | 4h | 0207 | UTILITIES SYSTEMS |
| 332 | 1.5.4.4 | Aprovação |  | 0.5d | 2026-08-03 | 2026-08-03 | 331 | 13d |  |  | TECNORED | 4h | 0207 | UTILITIES SYSTEMS |
| 333 | 1.5.5 | **FG-F0009-0000-GE-U-00004** |  | 4d | 2026-07-31 | 2026-08-05 |  | 11d |  |  | Calebe | 64h | 0207 | UTILITIES SYSTEMS |
| 334 | 1.5.5.1 | Emissão Inicial |  | 2d | 2026-07-31 | 2026-08-03 | 329 | 11d | 0d | finish no earlier than 2026-07-24 | Rodrigo | 16h | 0207 | UTILITIES SYSTEMS |
| 335 | 1.5.5.2 | Análise Tecnored |  | 1d | 2026-08-04 | 2026-08-04 | 334 | 11d | 0d |  | TECNORED | 8h | 0207 | UTILITIES SYSTEMS |
| 336 | 1.5.5.3 | Atendimento de comentários |  | 0.5d | 2026-08-05 | 2026-08-05 | 335 | 11d | 0d |  | André | 4h | 0207 | UTILITIES SYSTEMS |
| 337 | 1.5.5.4 | Aprovação |  | 0.5d | 2026-08-05 | 2026-08-05 | 336 | 11d |  |  | TECNORED | 4h | 0207 | UTILITIES SYSTEMS |
| 338 | 1.5.6 | **MC-F0009-0207-MB-U-00001** |  | 5d | 2026-07-21 | 2026-07-27 |  | 14d |  |  | Carlos | 80h | 0207 | UTILITIES SYSTEMS |
| 339 | 1.5.6.1 | Emissão Inicial |  | 2d | 2026-07-21 | 2026-07-22 | 77 | 14d | 0d | start no earlier than 2026-07-21 | Rodrigo | 16h | 0207 | UTILITIES SYSTEMS |
| 340 | 1.5.6.2 | Análise Tecnored |  | 1d | 2026-07-23 | 2026-07-23 | 339 | 18d | 0d |  | TECNORED | 8h | 0207 | UTILITIES SYSTEMS |
| 341 | 1.5.6.3 | Atendimento de comentários |  | 1d | 2026-07-24 | 2026-07-24 | 340 | 18d | 0d |  | André | 8h | 0207 | UTILITIES SYSTEMS |
| 342 | 1.5.6.4 | Aprovação |  | 1d | 2026-07-27 | 2026-07-27 | 341 | 18d |  |  | TECNORED | 8h | 0207 | UTILITIES SYSTEMS |
| 343 | 1.5.7 | **ET-F0009-0207-MB-U-00001** |  | 6d | 2026-07-23 | 2026-07-30 |  | 15d |  |  | Carlos | 96h | 0207 | UTILITIES SYSTEMS |
| 344 | 1.5.7.1 | Emissão Inicial |  | 3d | 2026-07-23 | 2026-07-27 | 339 | 15d | 0d | finish no earlier than 2026-07-27 | Rodrigo | 24h | 0207 | UTILITIES SYSTEMS |
| 345 | 1.5.7.2 | Análise Tecnored |  | 1d | 2026-07-28 | 2026-07-28 | 344 | 15d | 0d |  | TECNORED | 8h | 0207 | UTILITIES SYSTEMS |
| 346 | 1.5.7.3 | Atendimento de comentários |  | 1d | 2026-07-29 | 2026-07-29 | 345 | 15d | 0d |  | André | 8h | 0207 | UTILITIES SYSTEMS |
| 347 | 1.5.7.4 | Aprovação |  | 1d | 2026-07-30 | 2026-07-30 | 346 | 15d |  |  | TECNORED | 8h | 0207 | UTILITIES SYSTEMS |
| 348 | 1.5.8 | **MD-F0009-0207-MB-U-00001** | inactive | 4d | 2026-07-23 | 2026-07-28 |  | 17d |  |  | Carlos | 64h | 0207 | UTILITIES SYSTEMS |
| 349 | 1.5.8.1 | Emissão Inicial | inactive | 1d | 2026-07-23 | 2026-07-23 | 339 | 17d | 0d |  | Rodrigo | 8h | 0207 | UTILITIES SYSTEMS |
| 350 | 1.5.8.2 | Análise Tecnored | inactive | 1d | 2026-07-24 | 2026-07-24 | 349 | 17d | 0d |  | TECNORED | 8h | 0207 | UTILITIES SYSTEMS |
| 351 | 1.5.8.3 | Atendimento de comentários | inactive | 1d | 2026-07-27 | 2026-07-27 | 350 | 17d | 0d |  | André | 8h | 0207 | UTILITIES SYSTEMS |
| 352 | 1.5.8.4 | Aprovação | inactive | 1d | 2026-07-28 | 2026-07-28 | 351 | 17d |  |  | TECNORED | 8h | 0207 | UTILITIES SYSTEMS |

| ID | WBS | Task | Type | Duration | Start | Finish | Predecessors | Total slack | Free slack | Constraint | Resources | Work | COD_Projeto | Disciplina |
| --- | --- | --- | --- | --- | --- | --- | --- | --- | --- | --- | --- | --- | --- | --- |
| 353 | 1.6 | **PIPING** |  | 16d | 2026-07-23 | 2026-08-13 |  | 5d |  |  |  | 408h |  |  |
| 354 | 1.6.1 | **ML-F0009-0207-MB-T-00001** | inactive | 5d | 2026-07-23 | 2026-07-29 |  | 10d |  |  | Felipe, André | 80h | 0207 | PIPING |
| 355 | 1.6.1.1 | Emissão Inicial | inactive | 2d | 2026-07-23 | 2026-07-24 | 339 | 10d | 0d |  | Rodrigo | 16h | 0207 | PIPING |
| 356 | 1.6.1.2 | Análise Tecnored | inactive | 1d | 2026-07-27 | 2026-07-27 | 355 | 16d | 0d |  | TECNORED | 8h | 0207 | PIPING |
| 357 | 1.6.1.3 | Atendimento de comentários | inactive | 1d | 2026-07-28 | 2026-07-28 | 356 | 16d | 0d |  | André | 8h | 0207 | PIPING |
| 358 | 1.6.1.4 | Aprovação | inactive | 1d | 2026-07-29 | 2026-07-29 | 357 | 16d |  |  | TECNORED | 8h | 0207 | PIPING |
| 359 | 1.6.2 | **ML-F0009-0207-MB-T-00002** | inactive | 5d | 2026-07-23 | 2026-07-29 |  | 15d |  |  | Felipe, André | 80h | 0207 | PIPING |
| 360 | 1.6.2.1 | Emissão Inicial | inactive | 2d | 2026-07-23 | 2026-07-24 | 339 | 15d | 0d |  | Rodrigo | 16h | 0207 | PIPING |
| 361 | 1.6.2.2 | Análise Tecnored | inactive | 1d | 2026-07-27 | 2026-07-27 | 360 | 16d | 0d |  | TECNORED | 8h | 0207 | PIPING |
| 362 | 1.6.2.3 | Atendimento de comentários | inactive | 1d | 2026-07-28 | 2026-07-28 | 361 | 16d | 0d |  | André | 8h | 0207 | PIPING |
| 363 | 1.6.2.4 | Aprovação | inactive | 1d | 2026-07-29 | 2026-07-29 | 362 | 16d |  |  | TECNORED | 8h | 0207 | PIPING |
| 364 | 1.6.3 | **ML-F0009-0207-MB-T-00003** | inactive | 5d | 2026-07-27 | 2026-07-31 |  | 10d |  |  | Felipe, André | 80h | 0207 | PIPING |
| 365 | 1.6.3.1 | Emissão Inicial | inactive | 2d | 2026-07-27 | 2026-07-28 | 355 | 10d | 0d |  | Rodrigo | 16h | 0207 | PIPING |
| 366 | 1.6.3.2 | Análise Tecnored | inactive | 1d | 2026-07-29 | 2026-07-29 | 365 | 14d | 0d |  | TECNORED | 8h | 0207 | PIPING |
| 367 | 1.6.3.3 | Atendimento de comentários | inactive | 1d | 2026-07-30 | 2026-07-30 | 366 | 14d | 0d |  | André | 8h | 0207 | PIPING |
| 368 | 1.6.3.4 | Aprovação | inactive | 1d | 2026-07-31 | 2026-07-31 | 367 | 14d |  |  | TECNORED | 8h | 0207 | PIPING |
| 369 | 1.6.4 | **AG-F0009-0000-MB-T-00001** |  | 12d | 2026-07-23 | 2026-08-07 |  | 9d |  |  | Levy | 152h | 0207 | PIPING |
| 370 | 1.6.4.1 | Emissão Inicial |  | 3d | 2026-08-05 | 2026-08-07 | 123, 128 | 5d | 0d | start no earlier than 2026-08-05 | Rodrigo | 24h | 0207 | PIPING |
| 371 | 1.6.4.2 | Análise Tecnored |  | 1d | 2026-07-23 | 2026-07-23 | 360 | 17d | 0d |  | TECNORED | 8h | 0207 | PIPING |
| 372 | 1.6.4.3 | Atendimento de comentários |  | 2d | 2026-07-24 | 2026-07-27 | 371 | 17d | 0d |  | André | 16h | 0207 | PIPING |
| 373 | 1.6.4.4 | Aprovação |  | 1d | 2026-07-28 | 2026-07-28 | 372 | 17d |  |  | TECNORED | 8h | 0207 | PIPING |
| 374 | 1.6.5 | **AG-F0009-0000-MB-T-00002** |  | 6d | 2026-08-05 | 2026-08-12 |  | 5d |  |  | Levy | 96h | 0207 | PIPING |
| 375 | 1.6.5.1 | Emissão Inicial |  | 3d | 2026-08-05 | 2026-08-07 | 123, 128 | 5d | 0d | start no earlier than 2026-08-05 | Rodrigo | 24h | 0207 | PIPING |
| 376 | 1.6.5.2 | Análise Tecnored |  | 1d | 2026-08-10 | 2026-08-10 | 375 | 6d | 0d |  | TECNORED | 8h | 0207 | PIPING |
| 377 | 1.6.5.3 | Atendimento de comentários |  | 1d | 2026-08-11 | 2026-08-11 | 376 | 6d | 0d |  | André | 8h | 0207 | PIPING |
| 378 | 1.6.5.4 | Aprovação |  | 1d | 2026-08-12 | 2026-08-12 | 377 | 6d |  |  | TECNORED | 8h | 0207 | PIPING |

| ID | WBS | Task | Type | Duration | Start | Finish | Predecessors | Total slack | Free slack | Constraint | Resources | Work | COD_Projeto | Disciplina |
| --- | --- | --- | --- | --- | --- | --- | --- | --- | --- | --- | --- | --- | --- | --- |
| 379 | 1.6.6 | **AG-F0009-0000-MB-T-00003** |  | 6d | 2026-08-05 | 2026-08-12 |  | 5d |  |  | Levy | 96h | 0207 | PIPING |
| 380 | 1.6.6.1 | Emissão Inicial |  | 3d | 2026-08-05 | 2026-08-07 | 123, 128 | 5d | 0d | start no earlier than 2026-08-05 | Rodrigo | 24h | 0207 | PIPING |
| 381 | 1.6.6.2 | Análise Tecnored |  | 1d | 2026-08-10 | 2026-08-10 | 380 | 6d | 0d |  | TECNORED | 8h | 0207 | PIPING |
| 382 | 1.6.6.3 | Atendimento de comentários |  | 1d | 2026-08-11 | 2026-08-11 | 381 | 6d | 0d |  | André | 8h | 0207 | PIPING |
| 383 | 1.6.6.4 | Aprovação |  | 1d | 2026-08-12 | 2026-08-12 | 382 | 6d |  |  | TECNORED | 8h | 0207 | PIPING |
| 384 | 1.6.7 | **PQ-F0009-0207-MB-T-00001** |  | 4d | 2026-08-10 | 2026-08-13 |  | 5d |  |  | Carlos | 64h | 0207 | PIPING |
| 385 | 1.6.7.1 | Emissão Inicial |  | 1d | 2026-08-10 | 2026-08-10 | 370, 375, 380 | 5d | 0d | start no earlier than 2026-08-10 | Rodrigo | 8h | 0207 | PIPING |
| 386 | 1.6.7.2 | Análise Tecnored |  | 1d | 2026-08-11 | 2026-08-11 | 385 | 5d | 0d |  | TECNORED | 8h | 0207 | PIPING |
| 387 | 1.6.7.3 | Atendimento de comentários |  | 1d | 2026-08-12 | 2026-08-12 | 386 | 5d | 0d |  | André | 8h | 0207 | PIPING |
| 388 | 1.6.7.4 | Aprovação |  | 1d | 2026-08-13 | 2026-08-13 | 387 | 5d |  |  | TECNORED | 8h | 0207 | PIPING |
| 389 | 1.6.8 | **LK-F0009-0207-MB-T-00001** | inactive | 4d | 2026-08-11 | 2026-08-14 |  | 4d |  |  | Everton, Ricardo | 64h | 0207 | PIPING |
| 390 | 1.6.8.1 | Emissão Inicial | inactive | 1d | 2026-08-11 | 2026-08-11 | 385 | 4d | 0d |  | Rodrigo | 8h | 0207 | PIPING |
| 391 | 1.6.8.2 | Análise Tecnored | inactive | 1d | 2026-08-12 | 2026-08-12 | 390 | 4d | 0d |  | TECNORED | 8h | 0207 | PIPING |
| 392 | 1.6.8.3 | Atendimento de comentários | inactive | 1d | 2026-08-13 | 2026-08-13 | 391 | 4d | 0d |  | André | 8h | 0207 | PIPING |
| 393 | 1.6.8.4 | Aprovação | inactive | 1d | 2026-08-14 | 2026-08-14 | 392 | 4d |  |  | TECNORED | 8h | 0207 | PIPING |
| 394 | 1.7 | **STEEL STRUCTURE** |  | 15d | 2026-07-24 | 2026-08-13 |  | 5d |  |  |  | 1040h |  |  |
| 395 | 1.7.1 | **ML-F0009-0207-GE-S-00001** |  | 5d | 2026-07-24 | 2026-07-30 |  | 8d |  |  | Paulo | 80h | 0207 | STEEL STRUCTURE |
| 396 | 1.7.1.1 | Emissão Inicial |  | 3d | 2026-07-24 | 2026-07-28 | 188, 263 | 8d | 0d | finish no earlier than 2026-07-28 | Rodrigo | 24h | 0207 | STEEL STRUCTURE |
| 397 | 1.7.1.2 | Análise Tecnored |  | 1d | 2026-07-29 | 2026-07-29 | 396 | 15d | 0d |  | TECNORED | 8h | 0207 | STEEL STRUCTURE |
| 398 | 1.7.1.3 | Atendimento de comentários |  | 0.5d | 2026-07-30 | 2026-07-30 | 397 | 15d | 0d |  | André | 4h | 0207 | STEEL STRUCTURE |
| 399 | 1.7.1.4 | Aprovação |  | 0.5d | 2026-07-30 | 2026-07-30 | 398 | 15d |  |  | TECNORED | 4h | 0207 | STEEL STRUCTURE |
| 400 | 1.7.2 | **ML-F0009-0207-GE-S-00002** |  | 5d | 2026-07-24 | 2026-07-30 |  | 8d |  |  | Paulo | 80h | 0207 | STEEL STRUCTURE |
| 401 | 1.7.2.1 | Emissão Inicial |  | 3d | 2026-07-24 | 2026-07-28 | 188, 263 | 8d | 0d | finish no earlier than 2026-07-28 | Rodrigo | 24h | 0207 | STEEL STRUCTURE |
| 402 | 1.7.2.2 | Análise Tecnored |  | 1d | 2026-07-29 | 2026-07-29 | 401 | 15d | 0d |  | TECNORED | 8h | 0207 | STEEL STRUCTURE |
| 403 | 1.7.2.3 | Atendimento de comentários |  | 0.5d | 2026-07-30 | 2026-07-30 | 402 | 15d | 0d |  | André | 4h | 0207 | STEEL STRUCTURE |
| 404 | 1.7.2.4 | Aprovação |  | 0.5d | 2026-07-30 | 2026-07-30 | 403 | 15d |  |  | TECNORED | 4h | 0207 | STEEL STRUCTURE |

| ID | WBS | Task | Type | Duration | Start | Finish | Predecessors | Total slack | Free slack | Constraint | Resources | Work | COD_Projeto | Disciplina |
| --- | --- | --- | --- | --- | --- | --- | --- | --- | --- | --- | --- | --- | --- | --- |
| 405 | 1.7.3 | **ML-F0009-0207-GE-S-00003** |  | 5d | 2026-07-24 | 2026-07-30 |  | 8d |  |  | Paulo | 80h | 0207 | STEEL STRUCTURE |
| 406 | 1.7.3.1 | Emissão Inicial |  | 3d | 2026-07-24 | 2026-07-28 | 188, 263 | 8d | 0d | finish no earlier than 2026-07-28 | Rodrigo | 24h | 0207 | STEEL STRUCTURE |
| 407 | 1.7.3.2 | Análise Tecnored |  | 1d | 2026-07-29 | 2026-07-29 | 406 | 15d | 0d |  | TECNORED | 8h | 0207 | STEEL STRUCTURE |
| 408 | 1.7.3.3 | Atendimento de comentários |  | 0.5d | 2026-07-30 | 2026-07-30 | 407 | 15d | 0d |  | André | 4h | 0207 | STEEL STRUCTURE |
| 409 | 1.7.3.4 | Aprovação |  | 0.5d | 2026-07-30 | 2026-07-30 | 408 | 15d |  |  | TECNORED | 4h | 0207 | STEEL STRUCTURE |
| 410 | 1.7.4 | **ML-F0009-0207-GE-S-00004** |  | 4d | 2026-08-03 | 2026-08-06 |  | 6d |  |  | Paulo | 64h | 0207 | STEEL STRUCTURE |
| 411 | 1.7.4.1 | Emissão Inicial |  | 2d | 2026-08-03 | 2026-08-04 | 143, 193, 203, 213, 223, 233, 268, 273, 278, 283 | 6d | 0d | finish no earlier than 2026-07-30 | Rodrigo | 16h | 0207 | STEEL STRUCTURE |
| 412 | 1.7.4.2 | Análise Tecnored |  | 1d | 2026-08-05 | 2026-08-05 | 411 | 10d | 0d |  | TECNORED | 8h | 0207 | STEEL STRUCTURE |
| 413 | 1.7.4.3 | Atendimento de comentários |  | 0.5d | 2026-08-06 | 2026-08-06 | 412 | 10d | 0d |  | André | 4h | 0207 | STEEL STRUCTURE |
| 414 | 1.7.4.4 | Aprovação |  | 0.5d | 2026-08-06 | 2026-08-06 | 413 | 10d |  |  | TECNORED | 4h | 0207 | STEEL STRUCTURE |
| 415 | 1.7.5 | **ML-F0009-0207-GE-S-00005** |  | 4d | 2026-08-03 | 2026-08-06 |  | 5d |  |  | Paulo | 64h | 0207 | STEEL STRUCTURE |
| 416 | 1.7.5.1 | Emissão Inicial |  | 2d | 2026-08-03 | 2026-08-04 | 143, 193, 203, 213, 223, 233, 268, 273, 278, 283 | 5d | 0d | finish no earlier than 2026-07-30 | Rodrigo | 16h | 0207 | STEEL STRUCTURE |
| 417 | 1.7.5.2 | Análise Tecnored |  | 1d | 2026-08-05 | 2026-08-05 | 416 | 10d | 0d |  | TECNORED | 8h | 0207 | STEEL STRUCTURE |
| 418 | 1.7.5.3 | Atendimento de comentários |  | 0.5d | 2026-08-06 | 2026-08-06 | 417 | 10d | 0d |  | André | 4h | 0207 | STEEL STRUCTURE |
| 419 | 1.7.5.4 | Aprovação |  | 0.5d | 2026-08-06 | 2026-08-06 | 418 | 10d |  |  | TECNORED | 4h | 0207 | STEEL STRUCTURE |
| 420 | 1.7.6 | **ML-F0009-0207-GE-S-00006** | inactive | 2.5d | 2026-08-05 | 2026-08-07 |  | 4.5d |  |  | Paulo | 40h | 0207 | STEEL STRUCTURE |
| 421 | 1.7.6.1 | Emissão Inicial | inactive | 0.5d | 2026-08-05 | 2026-08-05 | 416 | 4.5d | 0d |  | Rodrigo | 4h | 0207 | STEEL STRUCTURE |
| 422 | 1.7.6.2 | Análise Tecnored | inactive | 1d | 2026-08-05 | 2026-08-06 | 421 | 9.5d | 0d |  | TECNORED | 8h | 0207 | STEEL STRUCTURE |
| 423 | 1.7.6.3 | Atendimento de comentários | inactive | 0.5d | 2026-08-06 | 2026-08-06 | 422 | 9.5d | 0d |  | André | 4h | 0207 | STEEL STRUCTURE |
| 424 | 1.7.6.4 | Aprovação | inactive | 0.5d | 2026-08-07 | 2026-08-07 | 423 | 9.5d |  |  | TECNORED | 4h | 0207 | STEEL STRUCTURE |
| 425 | 1.7.7 | **PQ-F0009-0207-GE-S-00001** |  | 6d | 2026-08-06 | 2026-08-13 |  | 5d |  |  | Paulo | 96h | 0207 | STEEL STRUCTURE |
| 426 | 1.7.7.1 | Emissão Inicial |  | 3d | 2026-08-06 | 2026-08-10 | 396, 401, 406, 411, 416, 436 | 5d | 0d | finish no earlier than 2026-08-10 | Rodrigo | 24h | 0207 | STEEL STRUCTURE |
| 427 | 1.7.7.2 | Análise Tecnored |  | 1d | 2026-08-11 | 2026-08-11 | 426 | 5d | 0d |  | TECNORED | 8h | 0207 | STEEL STRUCTURE |
| 428 | 1.7.7.3 | Atendimento de comentários |  | 1d | 2026-08-12 | 2026-08-12 | 427 | 5d | 0d |  | André | 8h | 0207 | STEEL STRUCTURE |
| 429 | 1.7.7.4 | Aprovação |  | 1d | 2026-08-13 | 2026-08-13 | 428 | 5d |  |  | TECNORED | 8h | 0207 | STEEL STRUCTURE |

| ID | WBS | Task | Type | Duration | Start | Finish | Predecessors | Total slack | Free slack | Constraint | Resources | Work | COD_Projeto | Disciplina |
| --- | --- | --- | --- | --- | --- | --- | --- | --- | --- | --- | --- | --- | --- | --- |
| 430 | 1.7.8 | **LM-F0009-0207-GE-S-00001** | inactive | 5d | 2026-08-10 | 2026-08-14 |  | 4d |  |  | Everton, Ricardo | 80h | 0207 | STEEL STRUCTURE |
| 431 | 1.7.8.1 | Emissão Inicial | inactive | 2d | 2026-08-10 | 2026-08-11 | 476 | 4d | 0d |  | Rodrigo | 16h | 0207 | STEEL STRUCTURE |
| 432 | 1.7.8.2 | Análise Tecnored | inactive | 1d | 2026-08-12 | 2026-08-12 | 431 | 4d | 0d |  | TECNORED | 8h | 0207 | STEEL STRUCTURE |
| 433 | 1.7.8.3 | Atendimento de comentários | inactive | 1d | 2026-08-13 | 2026-08-13 | 432 | 4d | 0d |  | André | 8h | 0207 | STEEL STRUCTURE |
| 434 | 1.7.8.4 | Aprovação | inactive | 1d | 2026-08-14 | 2026-08-14 | 433 | 4d |  |  | TECNORED | 8h | 0207 | STEEL STRUCTURE |
| 435 | 1.7.9 | **MC-F0009-0207-GE-S-00001** |  | 5d | 2026-08-03 | 2026-08-07 |  | 6d |  |  | Paulo | 80h | 0207 | STEEL STRUCTURE |
| 436 | 1.7.9.1 | Emissão Inicial |  | 2d | 2026-08-03 | 2026-08-04 | 143, 193, 203, 213, 223, 233, 268, 273, 278, 283 | 6d | 0d | finish no earlier than 2026-07-30 | Rodrigo | 16h | 0207 | STEEL STRUCTURE |
| 437 | 1.7.9.2 | Análise Tecnored |  | 1d | 2026-08-05 | 2026-08-05 | 436 | 9d | 0d |  | TECNORED | 8h | 0207 | STEEL STRUCTURE |
| 438 | 1.7.9.3 | Atendimento de comentários |  | 1d | 2026-08-06 | 2026-08-06 | 437 | 9d | 0d |  | André | 8h | 0207 | STEEL STRUCTURE |
| 439 | 1.7.9.4 | Aprovação |  | 1d | 2026-08-07 | 2026-08-07 | 438 | 9d |  |  | TECNORED | 8h | 0207 | STEEL STRUCTURE |
| 440 | 1.7.10 | **AG-F0009-0207-GE-S-00001** |  | 5d | 2026-07-29 | 2026-08-04 |  | 8d |  |  | Ailton | 80h | 0207 | STEEL STRUCTURE |
| 441 | 1.7.10.1 | Emissão Inicial |  | 3d | 2026-07-29 | 2026-07-31 | 396, 401, 406 | 8d | 0d | finish no earlier than 2026-07-31 | Rodrigo | 24h | 0207 | STEEL STRUCTURE |
| 442 | 1.7.10.2 | Análise Tecnored |  | 1d | 2026-08-03 | 2026-08-03 | 441 | 12d | 0d |  | TECNORED | 8h | 0207 | STEEL STRUCTURE |
| 443 | 1.7.10.3 | Atendimento de comentários |  | 0.5d | 2026-08-04 | 2026-08-04 | 442 | 12d | 0d |  | André | 4h | 0207 | STEEL STRUCTURE |
| 444 | 1.7.10.4 | Aprovação |  | 0.5d | 2026-08-04 | 2026-08-04 | 443 | 12d |  |  | TECNORED | 4h | 0207 | STEEL STRUCTURE |
| 445 | 1.7.11 | **AG-F0009-0207-GE-S-00002** |  | 5d | 2026-07-29 | 2026-08-04 |  | 8d |  |  | Ailton | 80h | 0207 | STEEL STRUCTURE |
| 446 | 1.7.11.1 | Emissão Inicial |  | 3d | 2026-07-29 | 2026-07-31 | 396, 401, 406 | 8d | 0d | finish no earlier than 2026-07-31 | Rodrigo | 24h | 0207 | STEEL STRUCTURE |
| 447 | 1.7.11.2 | Análise Tecnored |  | 1d | 2026-08-03 | 2026-08-03 | 446 | 12d | 0d |  | TECNORED | 8h | 0207 | STEEL STRUCTURE |
| 448 | 1.7.11.3 | Atendimento de comentários |  | 0.5d | 2026-08-04 | 2026-08-04 | 447 | 12d | 0d |  | André | 4h | 0207 | STEEL STRUCTURE |
| 449 | 1.7.11.4 | Aprovação |  | 0.5d | 2026-08-04 | 2026-08-04 | 448 | 12d |  |  | TECNORED | 4h | 0207 | STEEL STRUCTURE |
| 450 | 1.7.12 | **AG-F0009-0207-GE-S-00003** |  | 5d | 2026-07-29 | 2026-08-04 |  | 8d |  |  | Ailton | 80h | 0207 | STEEL STRUCTURE |
| 451 | 1.7.12.1 | Emissão Inicial |  | 3d | 2026-07-29 | 2026-07-31 | 396, 401, 406 | 8d | 0d | finish no earlier than 2026-07-31 | Rodrigo | 24h | 0207 | STEEL STRUCTURE |
| 452 | 1.7.12.2 | Análise Tecnored |  | 1d | 2026-08-03 | 2026-08-03 | 451 | 12d | 0d |  | TECNORED | 8h | 0207 | STEEL STRUCTURE |
| 453 | 1.7.12.3 | Atendimento de comentários |  | 0.5d | 2026-08-04 | 2026-08-04 | 452 | 12d | 0d |  | André | 4h | 0207 | STEEL STRUCTURE |
| 454 | 1.7.12.4 | Aprovação |  | 0.5d | 2026-08-04 | 2026-08-04 | 453 | 12d |  |  | TECNORED | 4h | 0207 | STEEL STRUCTURE |

| ID | WBS | Task | Type | Duration | Start | Finish | Predecessors | Total slack | Free slack | Constraint | Resources | Work | COD_Projeto | Disciplina |
| --- | --- | --- | --- | --- | --- | --- | --- | --- | --- | --- | --- | --- | --- | --- |
| 455 | 1.7.13 | **AG-F0009-0207-GE-S-00004** |  | 5d | 2026-08-05 | 2026-08-11 |  | 7d |  |  | Ailton | 80h | 0207 | STEEL STRUCTURE |
| 456 | 1.7.13.1 | Emissão Inicial |  | 3d | 2026-08-05 | 2026-08-07 | 451, 411, 416, 436, 441, 446 | 7d | 0d | finish no earlier than 2026-08-05 | Rodrigo | 24h | 0207 | STEEL STRUCTURE |
| 457 | 1.7.13.2 | Análise Tecnored |  | 1d | 2026-08-10 | 2026-08-10 | 456 | 7d | 0d |  | TECNORED | 8h | 0207 | STEEL STRUCTURE |
| 458 | 1.7.13.3 | Atendimento de comentários |  | 0.5d | 2026-08-11 | 2026-08-11 | 457 | 7d | 0d |  | André | 4h | 0207 | STEEL STRUCTURE |
| 459 | 1.7.13.4 | Aprovação |  | 0.5d | 2026-08-11 | 2026-08-11 | 458 | 7d |  |  | TECNORED | 4h | 0207 | STEEL STRUCTURE |
| 460 | 1.7.14 | **AG-F0009-0207-GE-S-00005** |  | 5d | 2026-08-05 | 2026-08-11 |  | 7d |  |  | Ailton | 80h | 0207 | STEEL STRUCTURE |
| 461 | 1.7.14.1 | Emissão Inicial |  | 3d | 2026-08-05 | 2026-08-07 | 411, 416, 436, 441, 446, 451 | 7d | 0d | finish no earlier than 2026-08-05 | Rodrigo | 24h | 0207 | STEEL STRUCTURE |
| 462 | 1.7.14.2 | Análise Tecnored |  | 1d | 2026-08-10 | 2026-08-10 | 461 | 7d | 0d |  | TECNORED | 8h | 0207 | STEEL STRUCTURE |
| 463 | 1.7.14.3 | Atendimento de comentários |  | 0.5d | 2026-08-11 | 2026-08-11 | 462 | 7d | 0d |  | André | 4h | 0207 | STEEL STRUCTURE |
| 464 | 1.7.14.4 | Aprovação |  | 0.5d | 2026-08-11 | 2026-08-11 | 463 | 7d |  |  | TECNORED | 4h | 0207 | STEEL STRUCTURE |
| 465 | 1.7.15 | **AG-F0009-0207-GE-S-00006** | inactive | 2.5d | 2026-08-10 | 2026-08-12 |  | 3.5d |  |  | Ailton | 40h | 0207 | STEEL STRUCTURE |
| 466 | 1.7.15.1 | Emissão Inicial | inactive | 0.5d | 2026-08-10 | 2026-08-10 | 461 | 3.5d | 0d |  | Rodrigo | 4h | 0207 | STEEL STRUCTURE |
| 467 | 1.7.15.2 | Análise Tecnored | inactive | 1d | 2026-08-10 | 2026-08-11 | 466 | 6.5d | 0d |  | TECNORED | 8h | 0207 | STEEL STRUCTURE |
| 468 | 1.7.15.3 | Atendimento de comentários | inactive | 0.5d | 2026-08-11 | 2026-08-11 | 467 | 6.5d | 0d |  | André | 4h | 0207 | STEEL STRUCTURE |
| 469 | 1.7.15.4 | Aprovação | inactive | 0.5d | 2026-08-12 | 2026-08-12 | 468 | 6.5d |  |  | TECNORED | 4h | 0207 | STEEL STRUCTURE |
| 470 | 1.7.16 | **PL-F0009-0207-GE-S-00001** | inactive | 5d | 2026-08-10 | 2026-08-17 |  | 3.5d |  |  | Felipe, André | 80h | 0207 | STEEL STRUCTURE |
| 471 | 1.7.16.1 | Emissão Inicial | inactive | 2d | 2026-08-10 | 2026-08-12 | 466 | 3.5d | 0d |  | Rodrigo | 16h | 0207 | STEEL STRUCTURE |
| 472 | 1.7.16.2 | Análise Tecnored | inactive | 1d | 2026-08-12 | 2026-08-13 | 471 | 3.5d | 0d |  | TECNORED | 8h | 0207 | STEEL STRUCTURE |
| 473 | 1.7.16.3 | Atendimento de comentários | inactive | 1d | 2026-08-13 | 2026-08-14 | 472 | 3.5d | 0d |  | André | 8h | 0207 | STEEL STRUCTURE |
| 474 | 1.7.16.4 | Aprovação | inactive | 1d | 2026-08-14 | 2026-08-17 | 473 | 3.5d |  |  | TECNORED | 8h | 0207 | STEEL STRUCTURE |
| 475 | 1.7.17 | **PL-F0009-0207-GE-S-00002** |  | 6d | 2026-08-05 | 2026-08-12 |  | 6d |  |  | Ailton | 96h | 0207 | STEEL STRUCTURE |
| 476 | 1.7.17.1 | Emissão Inicial |  | 3d | 2026-08-05 | 2026-08-07 | 411, 416, 436, 441, 446, 451 | 6d | 0d | finish no earlier than 2026-08-05 | Rodrigo | 24h | 0207 | STEEL STRUCTURE |
| 477 | 1.7.17.2 | Análise Tecnored |  | 1d | 2026-08-10 | 2026-08-10 | 476 | 6d | 0d |  | TECNORED | 8h | 0207 | STEEL STRUCTURE |
| 478 | 1.7.17.3 | Atendimento de comentários |  | 1d | 2026-08-11 | 2026-08-11 | 477 | 6d | 0d |  | André | 8h | 0207 | STEEL STRUCTURE |
| 479 | 1.7.17.4 | Aprovação |  | 1d | 2026-08-12 | 2026-08-12 | 478 | 6d |  |  | TECNORED | 8h | 0207 | STEEL STRUCTURE |

| ID | WBS | Task | Type | Duration | Start | Finish | Predecessors | Total slack | Free slack | Constraint | Resources | Work | COD_Projeto | Disciplina |
| --- | --- | --- | --- | --- | --- | --- | --- | --- | --- | --- | --- | --- | --- | --- |
| 480 | 1.8 | **ELECTRICAL** |  | 14d | 2026-08-03 | 2026-08-20 |  | 0d |  |  |  | 808h |  |  |
| 481 | 1.8.1 | **ML-F0009-0207-MB-E-00001** | inactive | 5d | 2026-08-14 | 2026-08-20 |  | -4d | 0d |  | Paulo | 80h | 0207 | ELECTRICAL |
| 482 | 1.8.1.1 | Emissão Inicial | inactive | 2d | 2026-08-14 | 2026-08-17 | 183 | -4d | 0d |  | Rodrigo | 16h | 0207 | ELECTRICAL |
| 483 | 1.8.1.2 | Análise Tecnored | inactive | 1d | 2026-08-18 | 2026-08-18 | 482 | 0d |  |  | TECNORED | 8h | 0207 | ELECTRICAL |
| 484 | 1.8.1.3 | Atendimento de comentários | inactive | 1d | 2026-08-19 | 2026-08-19 | 483 | 0d |  |  | André | 8h | 0207 | ELECTRICAL |
| 485 | 1.8.1.4 | Aprovação | inactive | 1d | 2026-08-20 | 2026-08-20 | 484 | 0d |  |  | TECNORED | 8h | 0207 | ELECTRICAL |
| 486 | 1.8.2 | **RL-F0009-0207-GE-E-00001** |  | 5d | 2026-08-10 | 2026-08-14 |  | 4d |  |  | Everton, Ricardo | 80h | 0207 | ELECTRICAL |
| 487 | 1.8.2.1 | Emissão Inicial |  | 2d | 2026-08-10 | 2026-08-11 | 527 | 4d | 0d |  | Rodrigo | 16h | 0207 | ELECTRICAL |
| 488 | 1.8.2.2 | Análise Tecnored |  | 1d | 2026-08-12 | 2026-08-12 | 487 | 4d | 0d |  | TECNORED | 8h | 0207 | ELECTRICAL |
| 489 | 1.8.2.3 | Atendimento de comentários |  | 1d | 2026-08-13 | 2026-08-13 | 488 | 4d | 0d |  | André | 8h | 0207 | ELECTRICAL |
| 490 | 1.8.2.4 | Aprovação |  | 1d | 2026-08-14 | 2026-08-14 | 489 | 4d |  |  | TECNORED | 8h | 0207 | ELECTRICAL |
| 491 | 1.8.3 | **LE-F0009-0000-GE-E-00001** | inactive | 5d | 2026-08-10 | 2026-08-14 |  | 4d |  |  | Rodrigo | 80h | 0207 | ELECTRICAL |
| 492 | 1.8.3.1 | Emissão Inicial | inactive | 2d | 2026-08-10 | 2026-08-11 | 527 | 4d | 0d |  | Rodrigo | 16h | 0207 | ELECTRICAL |
| 493 | 1.8.3.2 | Análise Tecnored | inactive | 1d | 2026-08-12 | 2026-08-12 | 492 | 4d | 0d |  | TECNORED | 8h | 0207 | ELECTRICAL |
| 494 | 1.8.3.3 | Atendimento de comentários | inactive | 1d | 2026-08-13 | 2026-08-13 | 493 | 4d | 0d |  | André | 8h | 0207 | ELECTRICAL |
| 495 | 1.8.3.4 | Aprovação | inactive | 1d | 2026-08-14 | 2026-08-14 | 494 | 4d |  |  | TECNORED | 8h | 0207 | ELECTRICAL |
| 496 | 1.8.4 | **LR-F0009-0207-MB-E-00001** |  | 5d | 2026-08-03 | 2026-08-07 |  | 9d |  |  | Lazaro | 80h | 0207 | ELECTRICAL |
| 497 | 1.8.4.1 | Emissão Inicial |  | 2d | 2026-08-03 | 2026-08-04 | 98, 108 | 9d | 0d | finish no earlier than 2026-08-04 | Rodrigo | 16h | 0207 | ELECTRICAL |
| 498 | 1.8.4.2 | Análise Tecnored |  | 1d | 2026-08-05 | 2026-08-05 | 497 | 9d | 0d |  | TECNORED | 8h | 0207 | ELECTRICAL |
| 499 | 1.8.4.3 | Atendimento de comentários |  | 1d | 2026-08-06 | 2026-08-06 | 498 | 9d | 0d |  | André | 8h | 0207 | ELECTRICAL |
| 500 | 1.8.4.4 | Aprovação |  | 1d | 2026-08-07 | 2026-08-07 | 499 | 9d |  |  | TECNORED | 8h | 0207 | ELECTRICAL |
| 501 | 1.8.5 | **DU-F0009-0207-MB-E-00001** |  | 6d | 2026-08-10 | 2026-08-17 |  | 0d |  |  | Rodrigo | 96h | 0207 | ELECTRICAL |
| 502 | 1.8.5.1 | Emissão Inicial |  | 3d | 2026-08-10 | 2026-08-12 | 527, 532 | 0d |  | finish no earlier than 2026-08-12 | Rodrigo | 24h | 0207 | ELECTRICAL |
| 503 | 1.8.5.2 | Análise Tecnored |  | 1d | 2026-08-13 | 2026-08-13 | 502 | 3d | 0d |  | TECNORED | 8h | 0207 | ELECTRICAL |
| 504 | 1.8.5.3 | Atendimento de comentários |  | 1d | 2026-08-14 | 2026-08-14 | 503 | 3d | 0d |  | André | 8h | 0207 | ELECTRICAL |
| 505 | 1.8.5.4 | Aprovação |  | 1d | 2026-08-17 | 2026-08-17 | 504 | 3d |  |  | TECNORED | 8h | 0207 | ELECTRICAL |

| ID | WBS | Task | Duration | Start | Finish | Predecessors | Total slack | Free slack | Constraint | Resources | Work | COD_Projeto | Disciplina |
| --- | --- | --- | --- | --- | --- | --- | --- | --- | --- | --- | --- | --- | --- |
| 506 | 1.8.6 | **FD-F0009-0207-MB-E-00004** | 6d | 2026-08-10 | 2026-08-17 |  | 0d |  |  | Rodrigo | 96h | 0207 | ELECTRICAL |
| 507 | 1.8.6.1 | Emissão Inicial | 3d | 2026-08-10 | 2026-08-12 | 527, 532 | 0d |  | finish no earlier than 2026-08-12 | Rodrigo | 24h | 0207 | ELECTRICAL |
| 508 | 1.8.6.2 | Análise Tecnored | 1d | 2026-08-13 | 2026-08-13 | 507 | 3d | 0d |  | TECNORED | 8h | 0207 | ELECTRICAL |
| 509 | 1.8.6.3 | Atendimento de comentários | 1d | 2026-08-14 | 2026-08-14 | 508 | 3d | 0d |  | André | 8h | 0207 | ELECTRICAL |
| 510 | 1.8.6.4 | Aprovação | 1d | 2026-08-17 | 2026-08-17 | 509 | 3d |  |  | TECNORED | 8h | 0207 | ELECTRICAL |
| 511 | 1.8.7 | **LM-F0009-0207-MB-E-00001** | 6d | 2026-08-13 | 2026-08-20 |  | 0d |  |  | Lazaro | 96h | 0207 | ELECTRICAL |
| 512 | 1.8.7.1 | Emissão Inicial | 3d | 2026-08-13 | 2026-08-17 | 502, 507, 522 | 0d |  | finish no earlier than 2026-08-17 | Rodrigo | 24h | 0207 | ELECTRICAL |
| 513 | 1.8.7.2 | Análise Tecnored | 1d | 2026-08-18 | 2026-08-18 | 512 | 0d |  |  | TECNORED | 8h | 0207 | ELECTRICAL |
| 514 | 1.8.7.3 | Atendimento de comentários | 1d | 2026-08-19 | 2026-08-19 | 513 | 0d |  |  | André | 8h | 0207 | ELECTRICAL |
| 515 | 1.8.7.4 | Aprovação | 1d | 2026-08-20 | 2026-08-20 | 514 | 0d |  |  | TECNORED | 8h | 0207 | ELECTRICAL |
| 516 | 1.8.8 | **PQ-F0009-0207-MB-E-00001** | 6d | 2026-08-13 | 2026-08-20 |  | 0d |  |  | Lazaro | 96h | 0207 | ELECTRICAL |
| 517 | 1.8.8.1 | Emissão Inicial | 3d | 2026-08-13 | 2026-08-17 | 502, 507, 522 | 0d |  | finish no earlier than 2026-08-17 | Rodrigo | 24h | 0207 | ELECTRICAL |
| 518 | 1.8.8.2 | Análise Tecnored | 1d | 2026-08-18 | 2026-08-18 | 517 | 0d |  |  | TECNORED | 8h | 0207 | ELECTRICAL |
| 519 | 1.8.8.3 | Atendimento de comentários | 1d | 2026-08-19 | 2026-08-19 | 518 | 0d |  |  | André | 8h | 0207 | ELECTRICAL |
| 520 | 1.8.8.4 | Aprovação | 1d | 2026-08-20 | 2026-08-20 | 519 | 0d |  |  | TECNORED | 8h | 0207 | ELECTRICAL |
| 521 | 1.8.9 | **MC-F0009-0207-MB-E-00001** | 3d | 2026-08-10 | 2026-08-12 |  | 0d |  |  | Rodrigo | 72h | 0207 | ELECTRICAL |
| 522 | 1.8.9.1 | Emissão Inicial | 3d | 2026-08-10 | 2026-08-12 | 527, 532 | 0d |  | finish no earlier than 2026-08-12 | Rodrigo | 24h | 0207 | ELECTRICAL |
| 523 | 1.8.9.2 | Análise Tecnored | 1d | 2026-08-10 | 2026-08-10 | 492 | 6d | 0d |  | TECNORED | 8h | 0207 | ELECTRICAL |
| 524 | 1.8.9.3 | Atendimento de comentários | 1d | 2026-08-11 | 2026-08-11 | 523 | 6d | 0d |  | André | 8h | 0207 | ELECTRICAL |
| 525 | 1.8.9.4 | Aprovação | 1d | 2026-08-12 | 2026-08-12 | 524 | 6d |  |  | TECNORED | 8h | 0207 | ELECTRICAL |
| 526 | 1.8.10 | **AG-F0009-0207-BM-E-00001** | 6d | 2026-08-05 | 2026-08-12 |  | 0d |  |  | Rodrigo | 96h | 0207 | ELECTRICAL |
| 527 | 1.8.10.1 | Emissão Inicial | 3d | 2026-08-05 | 2026-08-07 | 123, 128 | 0d |  | finish no earlier than 2026-08-07 | Rodrigo | 24h | 0207 | ELECTRICAL |
| 528 | 1.8.10.2 | Análise Tecnored | 1d | 2026-08-10 | 2026-08-10 | 527 | 6d | 0d |  | TECNORED | 8h | 0207 | ELECTRICAL |
| 529 | 1.8.10.3 | Atendimento de comentários | 1d | 2026-08-11 | 2026-08-11 | 528 | 6d | 0d |  | André | 8h | 0207 | ELECTRICAL |
| 530 | 1.8.10.4 | Aprovação | 1d | 2026-08-12 | 2026-08-12 | 529 | 6d |  |  | TECNORED | 8h | 0207 | ELECTRICAL |

| ID | WBS | Task | Type | Duration | Start | Finish | Predecessors | Total slack | Free slack | Constraint | Resources | Work | COD_Projeto | Disciplina |
| --- | --- | --- | --- | --- | --- | --- | --- | --- | --- | --- | --- | --- | --- | --- |
| 531 | 1.8.11 | **LC-F0009-0207-BM-E-00001** |  | 6d | 2026-08-05 | 2026-08-12 |  | 0d |  |  | Rodrigo | 96h | 0207 | ELECTRICAL |
| 532 | 1.8.11.1 | Emissão Inicial |  | 3d | 2026-08-05 | 2026-08-07 | 123, 128 | 0d |  | finish no earlier than 2026-08-07 | Rodrigo | 24h | 0207 | ELECTRICAL |
| 533 | 1.8.11.2 | Análise Tecnored |  | 1d | 2026-08-10 | 2026-08-10 | 532 | 6d | 0d |  | TECNORED | 8h | 0207 | ELECTRICAL |
| 534 | 1.8.11.3 | Atendimento de comentários |  | 1d | 2026-08-11 | 2026-08-11 | 533 | 6d | 0d |  | André | 8h | 0207 | ELECTRICAL |
| 535 | 1.8.11.4 | Aprovação |  | 1d | 2026-08-12 | 2026-08-12 | 534 | 6d |  |  | TECNORED | 8h | 0207 | ELECTRICAL |
| 536 | 1.9 | **INSTRUMENTATION / AUTOMATION** |  | 18d | 2026-07-21 | 2026-08-13 |  | 5d |  |  |  | 3432h |  |  |
| 537 | 1.9.1 | **LI-F0009-0000-GE-J-00001** |  | 9d | 2026-07-24 | 2026-08-05 |  | 5d |  |  | Everton, Ricardo | 144h | 0207 | INSTRUMENTATION / AUTOMATION |
| 538 | 1.9.1.1 | Emissão Inicial |  | 6d | 2026-07-24 | 2026-07-31 | 558 | 5d | 0d | finish no earlier than 2026-07-31 | Rodrigo | 48h | 0207 | INSTRUMENTATION / AUTOMATION |
| 539 | 1.9.1.2 | Análise Tecnored |  | 1d | 2026-08-03 | 2026-08-03 | 538 | 11d | 0d |  | TECNORED | 8h | 0207 | INSTRUMENTATION / AUTOMATION |
| 540 | 1.9.1.3 | Atendimento de comentários |  | 1d | 2026-08-04 | 2026-08-04 | 539 | 11d | 0d |  | André | 8h | 0207 | INSTRUMENTATION / AUTOMATION |
| 541 | 1.9.1.4 | Aprovação |  | 1d | 2026-08-05 | 2026-08-05 | 540 | 11d |  |  | TECNORED | 8h | 0207 | INSTRUMENTATION / AUTOMATION |
| 542 | 1.9.2 | **LE-F0009-0207-GE-J-00001** |  | 9d | 2026-07-24 | 2026-08-05 |  | 5d |  |  | Everton, Ricardo | 144h | 0207 | INSTRUMENTATION / AUTOMATION |
| 543 | 1.9.2.1 | Emissão Inicial |  | 6d | 2026-07-24 | 2026-07-31 | 558 | 5d | 0d | finish no earlier than 2026-07-31 | Rodrigo | 48h | 0207 | INSTRUMENTATION / AUTOMATION |
| 544 | 1.9.2.2 | Análise Tecnored |  | 1d | 2026-08-03 | 2026-08-03 | 543 | 11d | 0d |  | TECNORED | 8h | 0207 | INSTRUMENTATION / AUTOMATION |
| 545 | 1.9.2.3 | Atendimento de comentários |  | 1d | 2026-08-04 | 2026-08-04 | 544 | 11d | 0d |  | André | 8h | 0207 | INSTRUMENTATION / AUTOMATION |
| 546 | 1.9.2.4 | Aprovação |  | 1d | 2026-08-05 | 2026-08-05 | 545 | 11d |  |  | TECNORED | 8h | 0207 | INSTRUMENTATION / AUTOMATION |
| 547 | 1.9.3 | **MD-F0009-0207-GE-J-00001** | inactive | 5d | 2026-07-31 | 2026-08-06 |  | 10d |  |  | Carlos | 80h | 0207 | INSTRUMENTATION / AUTOMATION |
| 548 | 1.9.3.1 | Emissão Inicial | inactive | 2d | 2026-07-31 | 2026-08-03 | 678 | 10d | 0d |  | Rodrigo | 16h | 0207 | INSTRUMENTATION / AUTOMATION |
| 549 | 1.9.3.2 | Análise Tecnored | inactive | 1d | 2026-08-04 | 2026-08-04 | 548 | 10d | 0d |  | TECNORED | 8h | 0207 | INSTRUMENTATION / AUTOMATION |
| 550 | 1.9.3.3 | Atendimento de comentários | inactive | 1d | 2026-08-05 | 2026-08-05 | 549 | 10d | 0d |  | André | 8h | 0207 | INSTRUMENTATION / AUTOMATION |
| 551 | 1.9.3.4 | Aprovação | inactive | 1d | 2026-08-06 | 2026-08-06 | 550 | 10d |  |  | TECNORED | 8h | 0207 | INSTRUMENTATION / AUTOMATION |
| 552 | 1.9.4 | **PQ-F0009-0207-GE-J-00001** |  | 6d | 2026-08-06 | 2026-08-13 |  | 5d |  |  | Marcio | 96h | 0207 | INSTRUMENTATION / AUTOMATION |
| 553 | 1.9.4.1 | Emissão Inicial |  | 3d | 2026-08-06 | 2026-08-10 | 538, 543, 688, 698, 708 | 5d | 0d | finish no earlier than 2026-08-10 | Rodrigo | 24h | 0207 | INSTRUMENTATION / AUTOMATION |
| 554 | 1.9.4.2 | Análise Tecnored |  | 1d | 2026-08-11 | 2026-08-11 | 553 | 5d | 0d |  | TECNORED | 8h | 0207 | INSTRUMENTATION / AUTOMATION |
| 555 | 1.9.4.3 | Atendimento de comentários |  | 1d | 2026-08-12 | 2026-08-12 | 554 | 5d | 0d |  | André | 8h | 0207 | INSTRUMENTATION / AUTOMATION |
| 556 | 1.9.4.4 | Aprovação |  | 1d | 2026-08-13 | 2026-08-13 | 555 | 5d |  |  | TECNORED | 8h | 0207 | INSTRUMENTATION / AUTOMATION |

| ID | WBS | Task | Duration | Start | Finish | Predecessors | Total slack | Free slack | Constraint | Resources | Work | COD_Projeto | Disciplina |
| --- | --- | --- | --- | --- | --- | --- | --- | --- | --- | --- | --- | --- | --- |
| 557 | 1.9.5 | **FG-F0009-0207-GE-J-00001** | 6d | 2026-07-21 | 2026-07-28 |  | 5d |  |  | Paulo | 96h | 0207 | INSTRUMENTATION / AUTOMATION |
| 558 | 1.9.5.1 | Emissão Inicial | 3d | 2026-07-21 | 2026-07-23 | 77 | 5d | 0d | finish no earlier than 2026-07-23 | Rodrigo | 24h | 0207 | INSTRUMENTATION / AUTOMATION |
| 559 | 1.9.5.2 | Análise Tecnored | 1d | 2026-07-24 | 2026-07-24 | 558 | 17d | 0d |  | TECNORED | 8h | 0207 | INSTRUMENTATION / AUTOMATION |
| 560 | 1.9.5.3 | Atendimento de comentários | 1d | 2026-07-27 | 2026-07-27 | 559 | 17d | 0d |  | André | 8h | 0207 | INSTRUMENTATION / AUTOMATION |
| 561 | 1.9.5.4 | Aprovação | 1d | 2026-07-28 | 2026-07-28 | 560 | 17d |  |  | TECNORED | 8h | 0207 | INSTRUMENTATION / AUTOMATION |
| 562 | 1.9.6 | **DT-F0009-0207-GE-J-00001** | 5d | 2026-07-24 | 2026-07-30 |  | 15d |  |  | Everton, Ricardo | 80h | 0207 | INSTRUMENTATION / AUTOMATION |
| 563 | 1.9.6.1 | Emissão Inicial | 2d | 2026-07-24 | 2026-07-27 | 558 | 15d | 0d |  | Rodrigo | 16h | 0207 | INSTRUMENTATION / AUTOMATION |
| 564 | 1.9.6.2 | Análise Tecnored | 1d | 2026-07-28 | 2026-07-28 | 563 | 15d | 0d |  | TECNORED | 8h | 0207 | INSTRUMENTATION / AUTOMATION |
| 565 | 1.9.6.3 | Atendimento de comentários | 1d | 2026-07-29 | 2026-07-29 | 564 | 15d | 0d |  | André | 8h | 0207 | INSTRUMENTATION / AUTOMATION |
| 566 | 1.9.6.4 | Aprovação | 1d | 2026-07-30 | 2026-07-30 | 565 | 15d |  |  | TECNORED | 8h | 0207 | INSTRUMENTATION / AUTOMATION |
| 567 | 1.9.7 | **FD-F0009-0207-GE-J-00001** | 6.5d | 2026-07-24 | 2026-08-03 |  | 13.5d |  |  | Marcio | 104h | 0207 | INSTRUMENTATION / AUTOMATION |
| 568 | 1.9.7.1 | Emissão Inicial | 5d | 2026-07-24 | 2026-07-30 | 558 | 13.5d | 0d | finish no earlier than 2026-07-30 | Rodrigo | 40h | 0207 | INSTRUMENTATION / AUTOMATION |
| 569 | 1.9.7.2 | Análise Tecnored | 0.5d | 2026-07-31 | 2026-07-31 | 568 | 13.5d | 0d |  | TECNORED | 4h | 0207 | INSTRUMENTATION / AUTOMATION |
| 570 | 1.9.7.3 | Atendimento de comentários | 0.5d | 2026-07-31 | 2026-07-31 | 569 | 13.5d | 0d |  | André | 4h | 0207 | INSTRUMENTATION / AUTOMATION |
| 571 | 1.9.7.4 | Aprovação | 0.5d | 2026-08-03 | 2026-08-03 | 570 | 13.5d |  |  | TECNORED | 4h | 0207 | INSTRUMENTATION / AUTOMATION |
| 572 | 1.9.8 | **FD-F0009-0207-GE-J-00002** | 6.5d | 2026-07-24 | 2026-08-03 |  | 13.5d |  |  | Marcio | 104h | 0207 | INSTRUMENTATION / AUTOMATION |
| 573 | 1.9.8.1 | Emissão Inicial | 5d | 2026-07-24 | 2026-07-30 | 558 | 13.5d | 0d | finish no earlier than 2026-07-30 | Rodrigo | 40h | 0207 | INSTRUMENTATION / AUTOMATION |
| 574 | 1.9.8.2 | Análise Tecnored | 0.5d | 2026-07-31 | 2026-07-31 | 573 | 13.5d | 0d |  | TECNORED | 4h | 0207 | INSTRUMENTATION / AUTOMATION |
| 575 | 1.9.8.3 | Atendimento de comentários | 0.5d | 2026-07-31 | 2026-07-31 | 574 | 13.5d | 0d |  | André | 4h | 0207 | INSTRUMENTATION / AUTOMATION |
| 576 | 1.9.8.4 | Aprovação | 0.5d | 2026-08-03 | 2026-08-03 | 575 | 13.5d |  |  | TECNORED | 4h | 0207 | INSTRUMENTATION / AUTOMATION |
| 577 | 1.9.9 | **FD-F0009-0207-GE-J-00003** | 6.5d | 2026-07-24 | 2026-08-03 |  | 13.5d |  |  | Marcio | 104h | 0207 | INSTRUMENTATION / AUTOMATION |
| 578 | 1.9.9.1 | Emissão Inicial | 5d | 2026-07-24 | 2026-07-30 | 558 | 13.5d | 0d | finish no earlier than 2026-07-30 | Rodrigo | 40h | 0207 | INSTRUMENTATION / AUTOMATION |
| 579 | 1.9.9.2 | Análise Tecnored | 0.5d | 2026-07-31 | 2026-07-31 | 578 | 13.5d | 0d |  | TECNORED | 4h | 0207 | INSTRUMENTATION / AUTOMATION |
| 580 | 1.9.9.3 | Atendimento de comentários | 0.5d | 2026-07-31 | 2026-07-31 | 579 | 13.5d | 0d |  | André | 4h | 0207 | INSTRUMENTATION / AUTOMATION |
| 581 | 1.9.9.4 | Aprovação | 0.5d | 2026-08-03 | 2026-08-03 | 580 | 13.5d |  |  | TECNORED | 4h | 0207 | INSTRUMENTATION / AUTOMATION |

| ID | WBS | Task | Duration | Start | Finish | Predecessors | Total slack | Free slack | Constraint | Resources | Work | COD_Projeto | Disciplina |
| --- | --- | --- | --- | --- | --- | --- | --- | --- | --- | --- | --- | --- | --- |
| 582 | 1.9.10 | **FD-F0009-0207-GE-J-00004** | 6.5d | 2026-07-24 | 2026-08-03 |  | 13.5d |  |  | Marcio | 104h | 0207 | INSTRUMENTATION / AUTOMATION |
| 583 | 1.9.10.1 | Emissão Inicial | 5d | 2026-07-24 | 2026-07-30 | 558 | 13.5d | 0d | finish no earlier than 2026-07-30 | Rodrigo | 40h | 0207 | INSTRUMENTATION / AUTOMATION |
| 584 | 1.9.10.2 | Análise Tecnored | 0.5d | 2026-07-31 | 2026-07-31 | 583 | 13.5d | 0d |  | TECNORED | 4h | 0207 | INSTRUMENTATION / AUTOMATION |
| 585 | 1.9.10.3 | Atendimento de comentários | 0.5d | 2026-07-31 | 2026-07-31 | 584 | 13.5d | 0d |  | André | 4h | 0207 | INSTRUMENTATION / AUTOMATION |
| 586 | 1.9.10.4 | Aprovação | 0.5d | 2026-08-03 | 2026-08-03 | 585 | 13.5d |  |  | TECNORED | 4h | 0207 | INSTRUMENTATION / AUTOMATION |
| 587 | 1.9.11 | **FD-F0009-0207-GE-J-00005** | 6.5d | 2026-07-24 | 2026-08-03 |  | 13.5d |  |  | Marcio | 104h | 0207 | INSTRUMENTATION / AUTOMATION |
| 588 | 1.9.11.1 | Emissão Inicial | 5d | 2026-07-24 | 2026-07-30 | 558 | 13.5d | 0d | finish no earlier than 2026-07-30 | Rodrigo | 40h | 0207 | INSTRUMENTATION / AUTOMATION |
| 589 | 1.9.11.2 | Análise Tecnored | 0.5d | 2026-07-31 | 2026-07-31 | 588 | 13.5d | 0d |  | TECNORED | 4h | 0207 | INSTRUMENTATION / AUTOMATION |
| 590 | 1.9.11.3 | Atendimento de comentários | 0.5d | 2026-07-31 | 2026-07-31 | 589 | 13.5d | 0d |  | André | 4h | 0207 | INSTRUMENTATION / AUTOMATION |
| 591 | 1.9.11.4 | Aprovação | 0.5d | 2026-08-03 | 2026-08-03 | 590 | 13.5d |  |  | TECNORED | 4h | 0207 | INSTRUMENTATION / AUTOMATION |
| 592 | 1.9.12 | **FD-F0009-0207-GE-J-00006** | 6.5d | 2026-07-24 | 2026-08-03 |  | 13.5d |  |  | Marcio | 104h | 0207 | INSTRUMENTATION / AUTOMATION |
| 593 | 1.9.12.1 | Emissão Inicial | 5d | 2026-07-24 | 2026-07-30 | 558 | 13.5d | 0d | finish no earlier than 2026-07-30 | Rodrigo | 40h | 0207 | INSTRUMENTATION / AUTOMATION |
| 594 | 1.9.12.2 | Análise Tecnored | 0.5d | 2026-07-31 | 2026-07-31 | 593 | 13.5d | 0d |  | TECNORED | 4h | 0207 | INSTRUMENTATION / AUTOMATION |
| 595 | 1.9.12.3 | Atendimento de comentários | 0.5d | 2026-07-31 | 2026-07-31 | 594 | 13.5d | 0d |  | André | 4h | 0207 | INSTRUMENTATION / AUTOMATION |
| 596 | 1.9.12.4 | Aprovação | 0.5d | 2026-08-03 | 2026-08-03 | 595 | 13.5d |  |  | TECNORED | 4h | 0207 | INSTRUMENTATION / AUTOMATION |
| 597 | 1.9.13 | **FD-F0009-0207-GE-J-00007** | 6.5d | 2026-07-24 | 2026-08-03 |  | 13.5d |  |  | Marcio | 104h | 0207 | INSTRUMENTATION / AUTOMATION |
| 598 | 1.9.13.1 | Emissão Inicial | 5d | 2026-07-24 | 2026-07-30 | 558 | 13.5d | 0d | finish no earlier than 2026-07-30 | Rodrigo | 40h | 0207 | INSTRUMENTATION / AUTOMATION |
| 599 | 1.9.13.2 | Análise Tecnored | 0.5d | 2026-07-31 | 2026-07-31 | 598 | 13.5d | 0d |  | TECNORED | 4h | 0207 | INSTRUMENTATION / AUTOMATION |
| 600 | 1.9.13.3 | Atendimento de comentários | 0.5d | 2026-07-31 | 2026-07-31 | 599 | 13.5d | 0d |  | André | 4h | 0207 | INSTRUMENTATION / AUTOMATION |
| 601 | 1.9.13.4 | Aprovação | 0.5d | 2026-08-03 | 2026-08-03 | 600 | 13.5d |  |  | TECNORED | 4h | 0207 | INSTRUMENTATION / AUTOMATION |
| 602 | 1.9.14 | **FD-F0009-0207-GE-J-00008** | 6.5d | 2026-07-24 | 2026-08-03 |  | 13.5d |  |  | Marcio | 104h | 0207 | INSTRUMENTATION / AUTOMATION |
| 603 | 1.9.14.1 | Emissão Inicial | 5d | 2026-07-24 | 2026-07-30 | 558 | 13.5d | 0d | finish no earlier than 2026-07-30 | Rodrigo | 40h | 0207 | INSTRUMENTATION / AUTOMATION |
| 604 | 1.9.14.2 | Análise Tecnored | 0.5d | 2026-07-31 | 2026-07-31 | 603 | 13.5d | 0d |  | TECNORED | 4h | 0207 | INSTRUMENTATION / AUTOMATION |
| 605 | 1.9.14.3 | Atendimento de comentários | 0.5d | 2026-07-31 | 2026-07-31 | 604 | 13.5d | 0d |  | André | 4h | 0207 | INSTRUMENTATION / AUTOMATION |
| 606 | 1.9.14.4 | Aprovação | 0.5d | 2026-08-03 | 2026-08-03 | 605 | 13.5d |  |  | TECNORED | 4h | 0207 | INSTRUMENTATION / AUTOMATION |

| ID | WBS | Task | Duration | Start | Finish | Predecessors | Total slack | Free slack | Constraint | Resources | Work | COD_Projeto | Disciplina |
| --- | --- | --- | --- | --- | --- | --- | --- | --- | --- | --- | --- | --- | --- |
| 607 | 1.9.15 | **FD-F0009-0207-GE-J-00009** | 6.5d | 2026-07-24 | 2026-08-03 |  | 13.5d |  |  | Marcio | 104h | 0207 | INSTRUMENTATION / AUTOMATION |
| 608 | 1.9.15.1 | Emissão Inicial | 5d | 2026-07-24 | 2026-07-30 | 558 | 13.5d | 0d | finish no earlier than 2026-07-30 | Rodrigo | 40h | 0207 | INSTRUMENTATION / AUTOMATION |
| 609 | 1.9.15.2 | Análise Tecnored | 0.5d | 2026-07-31 | 2026-07-31 | 608 | 13.5d | 0d |  | TECNORED | 4h | 0207 | INSTRUMENTATION / AUTOMATION |
| 610 | 1.9.15.3 | Atendimento de comentários | 0.5d | 2026-07-31 | 2026-07-31 | 609 | 13.5d | 0d |  | André | 4h | 0207 | INSTRUMENTATION / AUTOMATION |
| 611 | 1.9.15.4 | Aprovação | 0.5d | 2026-08-03 | 2026-08-03 | 610 | 13.5d |  |  | TECNORED | 4h | 0207 | INSTRUMENTATION / AUTOMATION |
| 612 | 1.9.16 | **FD-F0009-0207-GE-J-00010** | 6.5d | 2026-07-24 | 2026-08-03 |  | 13.5d |  |  | Marcio | 104h | 0207 | INSTRUMENTATION / AUTOMATION |
| 613 | 1.9.16.1 | Emissão Inicial | 5d | 2026-07-24 | 2026-07-30 | 558 | 13.5d | 0d | finish no earlier than 2026-07-30 | Rodrigo | 40h | 0207 | INSTRUMENTATION / AUTOMATION |
| 614 | 1.9.16.2 | Análise Tecnored | 0.5d | 2026-07-31 | 2026-07-31 | 613 | 13.5d | 0d |  | TECNORED | 4h | 0207 | INSTRUMENTATION / AUTOMATION |
| 615 | 1.9.16.3 | Atendimento de comentários | 0.5d | 2026-07-31 | 2026-07-31 | 614 | 13.5d | 0d |  | André | 4h | 0207 | INSTRUMENTATION / AUTOMATION |
| 616 | 1.9.16.4 | Aprovação | 0.5d | 2026-08-03 | 2026-08-03 | 615 | 13.5d |  |  | TECNORED | 4h | 0207 | INSTRUMENTATION / AUTOMATION |
| 617 | 1.9.17 | **FD-F0009-0207-GE-J-00011** | 6.5d | 2026-07-24 | 2026-08-03 |  | 13.5d |  |  | Marcio | 104h | 0207 | INSTRUMENTATION / AUTOMATION |
| 618 | 1.9.17.1 | Emissão Inicial | 5d | 2026-07-24 | 2026-07-30 | 558 | 13.5d | 0d | finish no earlier than 2026-07-30 | Rodrigo | 40h | 0207 | INSTRUMENTATION / AUTOMATION |
| 619 | 1.9.17.2 | Análise Tecnored | 0.5d | 2026-07-31 | 2026-07-31 | 618 | 13.5d | 0d |  | TECNORED | 4h | 0207 | INSTRUMENTATION / AUTOMATION |
| 620 | 1.9.17.3 | Atendimento de comentários | 0.5d | 2026-07-31 | 2026-07-31 | 619 | 13.5d | 0d |  | André | 4h | 0207 | INSTRUMENTATION / AUTOMATION |
| 621 | 1.9.17.4 | Aprovação | 0.5d | 2026-08-03 | 2026-08-03 | 620 | 13.5d |  |  | TECNORED | 4h | 0207 | INSTRUMENTATION / AUTOMATION |
| 622 | 1.9.18 | **FD-F0009-0207-GE-J-00012** | 6.5d | 2026-07-24 | 2026-08-03 |  | 13.5d |  |  | Marcio | 104h | 0207 | INSTRUMENTATION / AUTOMATION |
| 623 | 1.9.18.1 | Emissão Inicial | 5d | 2026-07-24 | 2026-07-30 | 558 | 13.5d | 0d | finish no earlier than 2026-07-30 | Rodrigo | 40h | 0207 | INSTRUMENTATION / AUTOMATION |
| 624 | 1.9.18.2 | Análise Tecnored | 0.5d | 2026-07-31 | 2026-07-31 | 623 | 13.5d | 0d |  | TECNORED | 4h | 0207 | INSTRUMENTATION / AUTOMATION |
| 625 | 1.9.18.3 | Atendimento de comentários | 0.5d | 2026-07-31 | 2026-07-31 | 624 | 13.5d | 0d |  | André | 4h | 0207 | INSTRUMENTATION / AUTOMATION |
| 626 | 1.9.18.4 | Aprovação | 0.5d | 2026-08-03 | 2026-08-03 | 625 | 13.5d |  |  | TECNORED | 4h | 0207 | INSTRUMENTATION / AUTOMATION |
| 627 | 1.9.19 | **FD-F0009-0207-GE-J-00013** | 6.5d | 2026-07-24 | 2026-08-03 |  | 13.5d |  |  | Marcio | 104h | 0207 | INSTRUMENTATION / AUTOMATION |
| 628 | 1.9.19.1 | Emissão Inicial | 5d | 2026-07-24 | 2026-07-30 | 558 | 13.5d | 0d | finish no earlier than 2026-07-30 | Rodrigo | 40h | 0207 | INSTRUMENTATION / AUTOMATION |
| 629 | 1.9.19.2 | Análise Tecnored | 0.5d | 2026-07-31 | 2026-07-31 | 628 | 13.5d | 0d |  | TECNORED | 4h | 0207 | INSTRUMENTATION / AUTOMATION |
| 630 | 1.9.19.3 | Atendimento de comentários | 0.5d | 2026-07-31 | 2026-07-31 | 629 | 13.5d | 0d |  | André | 4h | 0207 | INSTRUMENTATION / AUTOMATION |
| 631 | 1.9.19.4 | Aprovação | 0.5d | 2026-08-03 | 2026-08-03 | 630 | 13.5d |  |  | TECNORED | 4h | 0207 | INSTRUMENTATION / AUTOMATION |

| ID | WBS | Task | Duration | Start | Finish | Predecessors | Total slack | Free slack | Constraint | Resources | Work | COD_Projeto | Disciplina |
| --- | --- | --- | --- | --- | --- | --- | --- | --- | --- | --- | --- | --- | --- |
| 632 | 1.9.20 | **FD-F0009-0207-GE-J-00014** | 6.5d | 2026-07-24 | 2026-08-03 |  | 13.5d |  |  | Marcio | 104h | 0207 | INSTRUMENTATION / AUTOMATION |
| 633 | 1.9.20.1 | Emissão Inicial | 5d | 2026-07-24 | 2026-07-30 | 558 | 13.5d | 0d | finish no earlier than 2026-07-30 | Rodrigo | 40h | 0207 | INSTRUMENTATION / AUTOMATION |
| 634 | 1.9.20.2 | Análise Tecnored | 0.5d | 2026-07-31 | 2026-07-31 | 633 | 13.5d | 0d |  | TECNORED | 4h | 0207 | INSTRUMENTATION / AUTOMATION |
| 635 | 1.9.20.3 | Atendimento de comentários | 0.5d | 2026-07-31 | 2026-07-31 | 634 | 13.5d | 0d |  | André | 4h | 0207 | INSTRUMENTATION / AUTOMATION |
| 636 | 1.9.20.4 | Aprovação | 0.5d | 2026-08-03 | 2026-08-03 | 635 | 13.5d |  |  | TECNORED | 4h | 0207 | INSTRUMENTATION / AUTOMATION |
| 637 | 1.9.21 | **FD-F0009-0207-GE-J-00015** | 6.5d | 2026-07-24 | 2026-08-03 |  | 13.5d |  |  | Marcio | 104h | 0207 | INSTRUMENTATION / AUTOMATION |
| 638 | 1.9.21.1 | Emissão Inicial | 5d | 2026-07-24 | 2026-07-30 | 558 | 13.5d | 0d | finish no earlier than 2026-07-30 | Rodrigo | 40h | 0207 | INSTRUMENTATION / AUTOMATION |
| 639 | 1.9.21.2 | Análise Tecnored | 0.5d | 2026-07-31 | 2026-07-31 | 638 | 13.5d | 0d |  | TECNORED | 4h | 0207 | INSTRUMENTATION / AUTOMATION |
| 640 | 1.9.21.3 | Atendimento de comentários | 0.5d | 2026-07-31 | 2026-07-31 | 639 | 13.5d | 0d |  | André | 4h | 0207 | INSTRUMENTATION / AUTOMATION |
| 641 | 1.9.21.4 | Aprovação | 0.5d | 2026-08-03 | 2026-08-03 | 640 | 13.5d |  |  | TECNORED | 4h | 0207 | INSTRUMENTATION / AUTOMATION |
| 642 | 1.9.22 | **FD-F0009-0207-GE-J-00016** | 6.5d | 2026-07-24 | 2026-08-03 |  | 13.5d |  |  | Marcio | 104h | 0207 | INSTRUMENTATION / AUTOMATION |
| 643 | 1.9.22.1 | Emissão Inicial | 5d | 2026-07-24 | 2026-07-30 | 558 | 13.5d | 0d | finish no earlier than 2026-07-30 | Rodrigo | 40h | 0207 | INSTRUMENTATION / AUTOMATION |
| 644 | 1.9.22.2 | Análise Tecnored | 0.5d | 2026-07-31 | 2026-07-31 | 643 | 13.5d | 0d |  | TECNORED | 4h | 0207 | INSTRUMENTATION / AUTOMATION |
| 645 | 1.9.22.3 | Atendimento de comentários | 0.5d | 2026-07-31 | 2026-07-31 | 644 | 13.5d | 0d |  | André | 4h | 0207 | INSTRUMENTATION / AUTOMATION |
| 646 | 1.9.22.4 | Aprovação | 0.5d | 2026-08-03 | 2026-08-03 | 645 | 13.5d |  |  | TECNORED | 4h | 0207 | INSTRUMENTATION / AUTOMATION |
| 647 | 1.9.23 | **FD-F0009-0207-GE-J-00017** | 6.5d | 2026-07-24 | 2026-08-03 |  | 13.5d |  |  | Marcio | 104h | 0207 | INSTRUMENTATION / AUTOMATION |
| 648 | 1.9.23.1 | Emissão Inicial | 5d | 2026-07-24 | 2026-07-30 | 558 | 13.5d | 0d | finish no earlier than 2026-07-30 | Rodrigo | 40h | 0207 | INSTRUMENTATION / AUTOMATION |
| 649 | 1.9.23.2 | Análise Tecnored | 0.5d | 2026-07-31 | 2026-07-31 | 648 | 13.5d | 0d |  | TECNORED | 4h | 0207 | INSTRUMENTATION / AUTOMATION |
| 650 | 1.9.23.3 | Atendimento de comentários | 0.5d | 2026-07-31 | 2026-07-31 | 649 | 13.5d | 0d |  | André | 4h | 0207 | INSTRUMENTATION / AUTOMATION |
| 651 | 1.9.23.4 | Aprovação | 0.5d | 2026-08-03 | 2026-08-03 | 650 | 13.5d |  |  | TECNORED | 4h | 0207 | INSTRUMENTATION / AUTOMATION |
| 652 | 1.9.24 | **FD-F0009-0207-GE-J-00018** | 6.5d | 2026-07-24 | 2026-08-03 |  | 13.5d |  |  | Marcio | 104h | 0207 | INSTRUMENTATION / AUTOMATION |
| 653 | 1.9.24.1 | Emissão Inicial | 5d | 2026-07-24 | 2026-07-30 | 558 | 13.5d | 0d | finish no earlier than 2026-07-30 | Rodrigo | 40h | 0207 | INSTRUMENTATION / AUTOMATION |
| 654 | 1.9.24.2 | Análise Tecnored | 0.5d | 2026-07-31 | 2026-07-31 | 653 | 13.5d | 0d |  | TECNORED | 4h | 0207 | INSTRUMENTATION / AUTOMATION |
| 655 | 1.9.24.3 | Atendimento de comentários | 0.5d | 2026-07-31 | 2026-07-31 | 654 | 13.5d | 0d |  | André | 4h | 0207 | INSTRUMENTATION / AUTOMATION |
| 656 | 1.9.24.4 | Aprovação | 0.5d | 2026-08-03 | 2026-08-03 | 655 | 13.5d |  |  | TECNORED | 4h | 0207 | INSTRUMENTATION / AUTOMATION |

| ID | WBS | Task | Duration | Start | Finish | Predecessors | Total slack | Free slack | Constraint | Resources | Work | COD_Projeto | Disciplina |
| --- | --- | --- | --- | --- | --- | --- | --- | --- | --- | --- | --- | --- | --- |
| 657 | 1.9.25 | **FD-F0009-0207-GE-J-00019** | 6.5d | 2026-07-24 | 2026-08-03 |  | 13.5d |  |  | Marcio | 104h | 0207 | INSTRUMENTATION / AUTOMATION |
| 658 | 1.9.25.1 | Emissão Inicial | 5d | 2026-07-24 | 2026-07-30 | 558 | 13.5d | 0d | finish no earlier than 2026-07-30 | Rodrigo | 40h | 0207 | INSTRUMENTATION / AUTOMATION |
| 659 | 1.9.25.2 | Análise Tecnored | 0.5d | 2026-07-31 | 2026-07-31 | 658 | 13.5d | 0d |  | TECNORED | 4h | 0207 | INSTRUMENTATION / AUTOMATION |
| 660 | 1.9.25.3 | Atendimento de comentários | 0.5d | 2026-07-31 | 2026-07-31 | 659 | 13.5d | 0d |  | André | 4h | 0207 | INSTRUMENTATION / AUTOMATION |
| 661 | 1.9.25.4 | Aprovação | 0.5d | 2026-08-03 | 2026-08-03 | 660 | 13.5d |  |  | TECNORED | 4h | 0207 | INSTRUMENTATION / AUTOMATION |
| 662 | 1.9.26 | **FD-F0009-0207-GE-J-00020** | 6.5d | 2026-07-24 | 2026-08-03 |  | 13.5d |  |  | Marcio | 104h | 0207 | INSTRUMENTATION / AUTOMATION |
| 663 | 1.9.26.1 | Emissão Inicial | 5d | 2026-07-24 | 2026-07-30 | 558 | 13.5d | 0d | finish no earlier than 2026-07-30 | Rodrigo | 40h | 0207 | INSTRUMENTATION / AUTOMATION |
| 664 | 1.9.26.2 | Análise Tecnored | 0.5d | 2026-07-31 | 2026-07-31 | 663 | 13.5d | 0d |  | TECNORED | 4h | 0207 | INSTRUMENTATION / AUTOMATION |
| 665 | 1.9.26.3 | Atendimento de comentários | 0.5d | 2026-07-31 | 2026-07-31 | 664 | 13.5d | 0d |  | André | 4h | 0207 | INSTRUMENTATION / AUTOMATION |
| 666 | 1.9.26.4 | Aprovação | 0.5d | 2026-08-03 | 2026-08-03 | 665 | 13.5d |  |  | TECNORED | 4h | 0207 | INSTRUMENTATION / AUTOMATION |
| 667 | 1.9.27 | **FD-F0009-0207-GE-J-00021** | 6.5d | 2026-07-24 | 2026-08-03 |  | 13.5d |  |  | Marcio | 104h | 0207 | INSTRUMENTATION / AUTOMATION |
| 668 | 1.9.27.1 | Emissão Inicial | 5d | 2026-07-24 | 2026-07-30 | 558 | 13.5d | 0d | finish no earlier than 2026-07-30 | Rodrigo | 40h | 0207 | INSTRUMENTATION / AUTOMATION |
| 669 | 1.9.27.2 | Análise Tecnored | 0.5d | 2026-07-31 | 2026-07-31 | 668 | 13.5d | 0d |  | TECNORED | 4h | 0207 | INSTRUMENTATION / AUTOMATION |
| 670 | 1.9.27.3 | Atendimento de comentários | 0.5d | 2026-07-31 | 2026-07-31 | 669 | 13.5d | 0d |  | André | 4h | 0207 | INSTRUMENTATION / AUTOMATION |
| 671 | 1.9.27.4 | Aprovação | 0.5d | 2026-08-03 | 2026-08-03 | 670 | 13.5d |  |  | TECNORED | 4h | 0207 | INSTRUMENTATION / AUTOMATION |
| 672 | 1.9.28 | **FD-F0009-0207-GE-J-00022** | 6.5d | 2026-07-24 | 2026-08-03 |  | 13.5d |  |  | Marcio | 104h | 0207 | INSTRUMENTATION / AUTOMATION |
| 673 | 1.9.28.1 | Emissão Inicial | 5d | 2026-07-24 | 2026-07-30 | 558 | 13.5d | 0d | finish no earlier than 2026-07-30 | Rodrigo | 40h | 0207 | INSTRUMENTATION / AUTOMATION |
| 674 | 1.9.28.2 | Análise Tecnored | 0.5d | 2026-07-31 | 2026-07-31 | 673 | 13.5d | 0d |  | TECNORED | 4h | 0207 | INSTRUMENTATION / AUTOMATION |
| 675 | 1.9.28.3 | Atendimento de comentários | 0.5d | 2026-07-31 | 2026-07-31 | 674 | 13.5d | 0d |  | André | 4h | 0207 | INSTRUMENTATION / AUTOMATION |
| 676 | 1.9.28.4 | Aprovação | 0.5d | 2026-08-03 | 2026-08-03 | 675 | 13.5d |  |  | TECNORED | 4h | 0207 | INSTRUMENTATION / AUTOMATION |
| 677 | 1.9.29 | **FD-F0009-0207-GE-J-00023** | 6.5d | 2026-07-24 | 2026-08-03 |  | 13.5d |  |  | Marcio | 104h | 0207 | INSTRUMENTATION / AUTOMATION |
| 678 | 1.9.29.1 | Emissão Inicial | 5d | 2026-07-24 | 2026-07-30 | 558 | 13.5d | 0d | finish no earlier than 2026-07-30 | Rodrigo | 40h | 0207 | INSTRUMENTATION / AUTOMATION |
| 679 | 1.9.29.2 | Análise Tecnored | 0.5d | 2026-07-31 | 2026-07-31 | 678 | 13.5d | 0d |  | TECNORED | 4h | 0207 | INSTRUMENTATION / AUTOMATION |
| 680 | 1.9.29.3 | Atendimento de comentários | 0.5d | 2026-07-31 | 2026-07-31 | 679 | 13.5d | 0d |  | André | 4h | 0207 | INSTRUMENTATION / AUTOMATION |
| 681 | 1.9.29.4 | Aprovação | 0.5d | 2026-08-03 | 2026-08-03 | 680 | 13.5d |  |  | TECNORED | 4h | 0207 | INSTRUMENTATION / AUTOMATION |

| ID | WBS | Task | Type | Duration | Start | Finish | Predecessors | Total slack | Free slack | Constraint | Resources | Work | COD_Projeto | Disciplina |
| --- | --- | --- | --- | --- | --- | --- | --- | --- | --- | --- | --- | --- | --- | --- |
| 682 | 1.9.30 | **DG-F0009-0207-GE-J00001** | inactive | 5d | 2026-07-24 | 2026-07-30 |  | 15d |  |  | André | 80h | 0207 | INSTRUMENTATION / AUTOMATION |
| 683 | 1.9.30.1 | Emissão Inicial | inactive | 2d | 2026-07-24 | 2026-07-27 | 558 | 15d | 0d |  | Rodrigo | 16h | 0207 | INSTRUMENTATION / AUTOMATION |
| 684 | 1.9.30.2 | Análise Tecnored | inactive | 1d | 2026-07-28 | 2026-07-28 | 683 | 15d | 0d |  | TECNORED | 8h | 0207 | INSTRUMENTATION / AUTOMATION |
| 685 | 1.9.30.3 | Atendimento de comentários | inactive | 1d | 2026-07-29 | 2026-07-29 | 684 | 15d | 0d |  | André | 8h | 0207 | INSTRUMENTATION / AUTOMATION |
| 686 | 1.9.30.4 | Aprovação | inactive | 1d | 2026-07-30 | 2026-07-30 | 685 | 15d |  |  | TECNORED | 8h | 0207 | INSTRUMENTATION / AUTOMATION |
| 687 | 1.9.31 | **DI-F0009-0207-GE-J00001** |  | 9d | 2026-07-24 | 2026-08-05 |  | 5d |  |  | Everton, Ricardo | 144h | 0207 | INSTRUMENTATION / AUTOMATION |
| 688 | 1.9.31.1 | Emissão Inicial |  | 6d | 2026-07-24 | 2026-07-31 | 558 | 5d | 0d | finish no earlier than 2026-07-31 | Rodrigo | 48h | 0207 | INSTRUMENTATION / AUTOMATION |
| 689 | 1.9.31.2 | Análise Tecnored |  | 1d | 2026-08-03 | 2026-08-03 | 688 | 11d | 0d |  | TECNORED | 8h | 0207 | INSTRUMENTATION / AUTOMATION |
| 690 | 1.9.31.3 | Atendimento de comentários |  | 1d | 2026-08-04 | 2026-08-04 | 689 | 11d | 0d |  | André | 8h | 0207 | INSTRUMENTATION / AUTOMATION |
| 691 | 1.9.31.4 | Aprovação |  | 1d | 2026-08-05 | 2026-08-05 | 690 | 11d |  |  | TECNORED | 8h | 0207 | INSTRUMENTATION / AUTOMATION |
| 692 | 1.9.32 | **AG-F0009-0207-GE-J00001** |  | 6d | 2026-08-03 | 2026-08-10 |  | 8d |  |  | Ricardo, Everton | 96h | 0207 | INSTRUMENTATION / AUTOMATION |
| 693 | 1.9.32.1 | Emissão Inicial |  | 3d | 2026-08-03 | 2026-08-05 | 538, 543, 688, 698 | 8d | 0d | finish no earlier than 2026-08-05 | Rodrigo | 24h | 0207 | INSTRUMENTATION / AUTOMATION |
| 694 | 1.9.32.2 | Análise Tecnored |  | 1d | 2026-08-06 | 2026-08-06 | 693 | 8d | 0d |  | TECNORED | 8h | 0207 | INSTRUMENTATION / AUTOMATION |
| 695 | 1.9.32.3 | Atendimento de comentários |  | 1d | 2026-08-07 | 2026-08-07 | 694 | 8d | 0d |  | André | 8h | 0207 | INSTRUMENTATION / AUTOMATION |
| 696 | 1.9.32.4 | Aprovação |  | 1d | 2026-08-10 | 2026-08-10 | 695 | 8d |  |  | TECNORED | 8h | 0207 | INSTRUMENTATION / AUTOMATION |
| 697 | 1.9.33 | **RE-F0009-0207-GE-J00001** |  | 9d | 2026-07-24 | 2026-08-05 |  | 5d |  |  | Everton, Ricardo | 144h | 0207 | INSTRUMENTATION / AUTOMATION |
| 698 | 1.9.33.1 | Emissão Inicial |  | 6d | 2026-07-24 | 2026-07-31 | 558 | 5d | 0d | finish no earlier than 2026-07-31 | Rodrigo | 48h | 0207 | INSTRUMENTATION / AUTOMATION |
| 699 | 1.9.33.2 | Análise Tecnored |  | 1d | 2026-08-03 | 2026-08-03 | 698 | 11d | 0d |  | TECNORED | 8h | 0207 | INSTRUMENTATION / AUTOMATION |
| 700 | 1.9.33.3 | Atendimento de comentários |  | 1d | 2026-08-04 | 2026-08-04 | 699 | 11d | 0d |  | André | 8h | 0207 | INSTRUMENTATION / AUTOMATION |
| 701 | 1.9.33.4 | Aprovação |  | 1d | 2026-08-05 | 2026-08-05 | 700 | 11d |  |  | TECNORED | 8h | 0207 | INSTRUMENTATION / AUTOMATION |
| 702 | 1.9.34 | **LL-F0009-0207-GE-J00001** | inactive | 5d | 2026-07-24 | 2026-07-30 |  | 15d |  |  | Everton, Ricardo | 80h | 0207 | INSTRUMENTATION / AUTOMATION |
| 703 | 1.9.34.1 | Emissão Inicial | inactive | 2d | 2026-07-24 | 2026-07-27 | 558 | 15d | 0d |  | Rodrigo | 16h | 0207 | INSTRUMENTATION / AUTOMATION |
| 704 | 1.9.34.2 | Análise Tecnored | inactive | 1d | 2026-07-28 | 2026-07-28 | 703 | 15d | 0d |  | TECNORED | 8h | 0207 | INSTRUMENTATION / AUTOMATION |
| 705 | 1.9.34.3 | Atendimento de comentários | inactive | 1d | 2026-07-29 | 2026-07-29 | 704 | 15d | 0d |  | André | 8h | 0207 | INSTRUMENTATION / AUTOMATION |
| 706 | 1.9.34.4 | Aprovação | inactive | 1d | 2026-07-30 | 2026-07-30 | 705 | 15d |  |  | TECNORED | 8h | 0207 | INSTRUMENTATION / AUTOMATION |

| ID | WBS | Task | Duration | Start | Finish | Predecessors | Total slack | Free slack | Constraint | Resources | Work | COD_Projeto | Disciplina |
| --- | --- | --- | --- | --- | --- | --- | --- | --- | --- | --- | --- | --- | --- |
| 707 | 1.9.35 | **LB-F0009-0207-GE-J00001** | 6d | 2026-08-03 | 2026-08-10 |  | 5d |  |  | Paulo | 96h | 0207 | INSTRUMENTATION / AUTOMATION |
| 708 | 1.9.35.1 | Emissão Inicial | 3d | 2026-08-03 | 2026-08-05 | 538, 543, 688, 698 | 5d | 0d | finish no earlier than 2026-08-05 | Rodrigo | 24h | 0207 | INSTRUMENTATION / AUTOMATION |
| 709 | 1.9.35.2 | Análise Tecnored | 1d | 2026-08-06 | 2026-08-06 | 708 | 8d | 0d |  | TECNORED | 8h | 0207 | INSTRUMENTATION / AUTOMATION |
| 710 | 1.9.35.3 | Atendimento de comentários | 1d | 2026-08-07 | 2026-08-07 | 709 | 8d | 0d |  | André | 8h | 0207 | INSTRUMENTATION / AUTOMATION |
| 711 | 1.9.35.4 | Aprovação | 1d | 2026-08-10 | 2026-08-10 | 710 | 8d |  |  | TECNORED | 8h | 0207 | INSTRUMENTATION / AUTOMATION |
